# Schedules

Schedule from MS Project, 2015-09-07 to 2015-12-21, A marks actual dates.
Grizli777

## Calendars

- 3S calendar: Mon-Sun 08:00-12:00, 13:00-17:00.

## Resources

| Resource |
| --- |
| TEAM |
| KhanhKC |
| HoangNK |
| QuyenNV |
| HuyTDH |
| NhungNTH |
| HoangLVQ |

## Schedule

| ID | WBS | Task | Type | Duration | Start | Finish | Predecessors | Complete | Remaining | Total slack | Constraint | Resources | Work | Actual work |
| --- | --- | --- | --- | --- | --- | --- | --- | --- | --- | --- | --- | --- | --- | --- |
| 1 | 1 | **Super Shipper System** |  | 106d | 2015-09-07 A | 2015-12-21 |  | 17% | 87.9d | 0d |  |  | 5800h | 1032h |
| 2 | 1.1 | **Initiation** |  | 28d | 2015-09-07 A | 2015-10-04 |  | 69% | 8.76d | 78d |  |  | 1292h | 1032h |
| 3 | 1.1.1 | Form up team roles |  | 1d | 2015-09-07 A | 2015-09-07 A |  | 100% |  |  | finish no earlier than 2015-09-07 | HoangLVQ; KhanhKC; HuyTDH; NhungNTH; QuyenNV; HoangNK | 48h | 48h |
| 4 | 1.1.2 | Uniform idea meeting |  | 1d | 2015-09-07 A | 2015-09-07 A |  | 100% |  |  | start no earlier than 2015-09-07 | HoangLVQ; HoangNK; HuyTDH; KhanhKC; NhungNTH; QuyenNV | 48h | 48h |
| 5 | 1.1.3 | **Project Clarification** |  | 2d | 2015-09-08 A | 2015-09-09 A |  | 100% |  |  |  |  | 144h | 144h |
| 6 | 1.1.3.1 | Clarify project scope |  | 0.5d | 2015-09-08 A | 2015-09-08 A |  | 100% |  |  | start no earlier than 2015-09-08 | HoangLVQ; HoangNK; HuyTDH; KhanhKC; NhungNTH; QuyenNV | 24h | 24h |
| 7 | 1.1.3.2 | Clarify techinical requirements |  | 0.5d | 2015-09-08 A | 2015-09-08 A |  | 100% |  |  | start no earlier than 2015-09-08 | HoangLVQ; HoangNK; HuyTDH; KhanhKC; NhungNTH; QuyenNV | 24h | 24h |
| 8 | 1.1.3.3 | Clarify rules in Team |  | 0.5d | 2015-09-08 A | 2015-09-08 A |  | 100% |  |  | start no earlier than 2015-09-08 | HoangLVQ; HoangNK; HuyTDH; KhanhKC; NhungNTH; QuyenNV | 24h | 24h |
| 9 | 1.1.3.4 | Clarify working enviroments |  | 0.5d | 2015-09-08 A | 2015-09-08 A |  | 100% |  |  | start no earlier than 2015-09-08 | HoangLVQ; HoangNK; HuyTDH; KhanhKC; NhungNTH; QuyenNV | 24h | 24h |
| 10 | 1.1.3.5 | Survey practise |  | 1d | 2015-09-09 A | 2015-09-09 A |  | 100% |  |  | start no earlier than 2015-09-09 | HoangLVQ; HoangNK; HuyTDH; KhanhKC; NhungNTH; QuyenNV | 48h | 48h |
| 11 | 1.1.4 | **Meeting with supervisor** |  | 0.5d | 2015-09-09 A | 2015-09-09 A |  | 100% |  |  |  |  | 96h | 96h |
| 12 | 1.1.4.1 | Review project's idea |  | 0.5d | 2015-09-09 A | 2015-09-09 A |  | 100% |  |  | start no earlier than 2015-09-09 | HoangLVQ; HoangNK; HuyTDH; KhanhKC; NhungNTH; QuyenNV | 24h | 24h |
| 13 | 1.1.4.2 | Appprove Project's idea | milestone | 0d | 2015-09-09 A | 2015-09-09 A |  | 100% |  |  | start no earlier than 2015-09-09 |  |  |  |
| 14 | 1.1.4.3 | Discuss on technique to be used |  | 0.5d | 2015-09-09 A | 2015-09-09 A |  | 100% |  |  | start no earlier than 2015-09-09 | HoangLVQ; HoangNK; HuyTDH; KhanhKC; NhungNTH; QuyenNV | 24h | 24h |
| 15 | 1.1.4.4 | Uniform meeting schedule & project's deliverables |  | 0.5d | 2015-09-09 A | 2015-09-09 A |  | 100% |  |  | start no earlier than 2015-09-09 | HoangLVQ; HoangNK; HuyTDH; KhanhKC; NhungNTH; QuyenNV | 24h | 24h |
| 16 | 1.1.4.5 | Clarify the tasks on each report |  | 0.5d | 2015-09-09 A | 2015-09-09 A |  | 100% |  |  | start no earlier than 2015-09-09 | HoangLVQ; HoangNK; HuyTDH; KhanhKC; NhungNTH; QuyenNV | 24h | 24h |
| 17 | 1.1.5 | **Project Introduction** |  | 4d | 2015-09-10 A | 2015-09-13 A |  | 100% |  |  |  |  | 128h | 128h |
| 18 | 1.1.5.1 | Survery practise |  | 1d | 2015-09-10 A | 2015-09-10 A |  | 100% |  |  | start no earlier than 2015-09-10 | HoangLVQ; HoangNK; HuyTDH; KhanhKC; NhungNTH; QuyenNV | 48h | 48h |
| 19 | 1.1.5.2 | Research Background |  | 1d | 2015-09-11 A | 2015-09-11 A |  | 100% |  |  | start no earlier than 2015-09-11 | KhanhKC; HoangNK; QuyenNV | 24h | 24h |
| 20 | 1.1.5.3 | Research Competitor |  | 1d | 2015-09-11 A | 2015-09-11 A |  | 100% |  |  | start no earlier than 2015-09-11 | HuyTDH; NhungNTH | 16h | 16h |
| 21 | 1.1.5.4 | Research Proposal |  | 1d | 2015-09-11 A | 2015-09-11 A |  | 100% |  |  | start no earlier than 2015-09-11 | HoangLVQ | 8h | 8h |
| 22 | 1.1.5.5 | Create project introduction document |  | 2d | 2015-09-12 A | 2015-09-13 A | 21 | 100% |  |  | start no earlier than 2015-09-12 | HoangLVQ; KhanhKC | 32h | 32h |
| 23 | 1.1.5.6 | Complete introduction document | milestone | 0d | 2015-09-13 A | 2015-09-13 A | 24 | 100% |  |  |  | HoangLVQ |  |  |
| 24 | 1.1.5.7 | Submit introduction document to supervisor | milestone | 0d | 2015-09-13 A | 2015-09-13 A |  | 100% |  |  | start no earlier than 2015-09-13 | HoangLVQ |  |  |

| ID | WBS | Task | Type | Duration | Start | Finish | Predecessors | Complete | Remaining | Total slack | Free slack | Constraint | Resources | Work | Actual work |
| --- | --- | --- | --- | --- | --- | --- | --- | --- | --- | --- | --- | --- | --- | --- | --- |
| 25 | 1.1.6 | **Planning** |  | 6d | 2015-09-14 A | 2015-09-20 A |  | 100% |  |  |  |  |  | 48h | 48h |
| 26 | 1.1.6.1 | Research and make choice process model |  | 2d | 2015-09-14 A | 2015-09-15 A |  | 100% |  |  |  | start no earlier than 2015-09-14 | HoangLVQ | 16h | 16h |
| 27 | 1.1.6.2 | Create work schedule |  | 1d | 2015-09-16 A | 2015-09-16 A | 26 | 100% |  |  |  |  | HoangLVQ | 8h | 8h |
| 28 | 1.1.6.3 | Create project manage Plan document |  | 2d | 2015-09-17 A | 2015-09-18 A | 27 | 100% |  |  |  |  | HoangLVQ | 16h | 16h |
| 29 | 1.1.6.4 | Review and update project manage plan document |  | 1d | 2015-09-19 A | 2015-09-19 A | 28 | 100% |  |  |  |  | HoangLVQ | 8h | 8h |
| 30 | 1.1.6.5 | Complete PMP document ver1.0 | milestone | 0d | 2015-09-20 A | 2015-09-20 A | 31 | 100% |  |  |  |  | HoangLVQ |  |  |
| 31 | 1.1.6.6 | Submit PMP document to supervisor | milestone | 0d | 2015-09-20 A | 2015-09-20 A |  | 100% |  |  |  | start no earlier than 2015-09-20 | HoangLVQ |  |  |
| 32 | 1.1.7 | **Requirement** |  | 21d | 2015-09-14 A | 2015-10-04 |  | 56% | 9.26d | 78d |  |  |  | 780h | 520h |
| 33 | 1.1.7.1 | Define functions of system |  | 1d | 2015-09-14 A | 2015-09-14 A |  | 100% |  |  |  | start no earlier than 2015-09-14 | HoangLVQ; HoangNK; HuyTDH; KhanhKC; NhungNTH; QuyenNV | 48h | 48h |
| 34 | 1.1.7.2 | **Create user cases** |  | 6d | 2015-09-15 A | 2015-09-20 A | 33 | 100% |  |  |  |  |  | 240h | 240h |
| 35 | 1.1.7.2.1 | User Cases: Shipper |  | 6d | 2015-09-15 A | 2015-09-20 A |  | 100% |  |  |  |  | HuyTDH; QuyenNV | 96h | 96h |
| 36 | 1.1.7.2.2 | User Cases: Store |  | 6d | 2015-09-15 A | 2015-09-20 A |  | 100% |  |  |  |  | HoangLVQ; KhanhKC | 96h | 96h |
| 37 | 1.1.7.2.3 | User Cases: Admin |  | 6d | 2015-09-15 A | 2015-09-20 A |  | 100% |  |  |  | start no earlier than 2015-09-15 | HoangNK | 48h | 48h |
| 38 | 1.1.7.3 | Design Mockup screens |  | 4d | 2015-09-21 A | 2015-09-24 A |  | 100% |  |  |  | finish no earlier than 2015-09-24 | HoangLVQ; HoangNK; HuyTDH; KhanhKC; NhungNTH; QuyenNV | 192h | 192h |
| 39 | 1.1.7.4 | **Create Sequence Diagram** |  | 3d | 2015-09-25 A | 2015-09-27 A | 38 | 100% |  |  |  |  |  | 40h | 40h |
| 40 | 1.1.7.4.1 | Sequence Diagram : Admin |  | 1d | 2015-09-25 A | 2015-09-27 A |  | 100% |  |  |  | finish no earlier than 2015-09-27 | HoangNK | 8h | 8h |
| 41 | 1.1.7.4.2 | Sequence Diagram : Shipper |  | 1d | 2015-09-25 A | 2015-09-27 A |  | 100% |  |  |  | finish no earlier than 2015-09-27 | HuyTDH; QuyenNV | 16h | 16h |
| 42 | 1.1.7.4.3 | Sequence Diagram : Store |  | 1d | 2015-09-25 A | 2015-09-27 A |  | 100% |  |  |  | finish no earlier than 2015-09-27 | KhanhKC; HoangLVQ | 16h | 16h |
| 43 | 1.1.7.5 | **Update Software Requirement Specification Document** |  | 7d | 2015-09-28 | 2015-10-04 | 34 |  |  | 77d | 0d |  |  | 260h |  |
| 44 | 1.1.7.5.1 | Update usecase, sequence, mockup: Store |  | 4d | 2015-09-28 | 2015-10-01 |  |  |  | 79d |  | finish no earlier than 2015-10-01 | KhanhKC; HoangLVQ | 64h |  |
| 45 | 1.1.7.5.2 | Update usecase, sequence, mockup: Admin |  | 4d | 2015-09-28 | 2015-10-01 |  |  |  | 77d | 0d | start no earlier than 2015-09-28 | HoangNK | 32h |  |
| 46 | 1.1.7.5.3 | Update usecase, sequence, mockup: Shipper |  | 4d | 2015-09-28 | 2015-10-01 |  |  |  | 77d | 0d | start no earlier than 2015-09-28 | HuyTDH; QuyenNV | 64h |  |
| 47 | 1.1.7.5.4 | Update Non-functional |  | 0.5d | 2015-09-28 | 2015-09-28 |  |  |  | 84.5d |  | start no earlier than 2015-09-28 | KhanhKC | 4h |  |
| 48 | 1.1.7.5.5 | Update Project Introdcution, Overall Description SRS |  | 1d | 2015-10-02 | 2015-10-02 | 45 |  |  | 77d | 1d |  | HoangLVQ | 8h |  |
| 49 | 1.1.7.5.6 | Create Entity Relationship Diagram |  | 2d | 2015-10-02 | 2015-10-04 | 46 |  |  | 77d |  |  | HuyTDH | 16h |  |
| 50 | 1.1.7.5.7 | Create State Machine Diragram for Order |  | 2d | 2015-10-02 | 2015-10-04 |  |  |  | 77d |  | start no earlier than 2015-10-02 | KhanhKC | 16h |  |
| 51 | 1.1.7.5.8 | Create Activity Diagram |  | 2d | 2015-10-02 | 2015-10-04 |  |  |  | 77d |  | start no earlier than 2015-10-02 | HoangNK; NhungNTH; QuyenNV | 48h |  |
| 52 | 1.1.7.5.9 | Review SRS document |  | 1d | 2015-10-04 | 2015-10-04 | 48 |  |  | 78d |  | start no earlier than 2015-10-03 | HoangLVQ | 8h |  |
| 53 | 1.1.7.6 | Complete SRS document | milestone | 0d | 2015-10-04 | 2015-10-04 |  |  |  | 79d |  | start no earlier than 2015-10-04 | HoangLVQ |  |  |
| 54 | 1.1.7.7 | Submit SRS document to supervisor | milestone | 0d | 2015-10-04 | 2015-10-04 | 43 |  |  | 78d |  | start no earlier than 2015-10-04 | HoangLVQ |  |  |

| ID | WBS | Task | Type | Duration | Start | Finish | Predecessors | Total slack | Free slack | Constraint | Resources | Work |
| --- | --- | --- | --- | --- | --- | --- | --- | --- | --- | --- | --- | --- |
| 55 | 1.2 | **Increment 1** |  | 36d | 2015-10-05 | 2015-11-09 |  | 42d |  |  |  | 2260h |
| 56 | 1.2.1 | **Project Plan** |  | 1d | 2015-10-05 | 2015-10-05 |  | 77d |  |  |  | 4h |
| 57 | 1.2.1.1 | Review and update Project Manage Plan |  | 1d | 2015-10-05 | 2015-10-05 |  | 77d |  | start no earlier than 2015-10-05 | HoangLVQ [50%] | 4h |
| 58 | 1.2.2 | **System Architecture Design** |  | 8d | 2015-10-05 | 2015-10-12 |  | 68d |  |  |  | 288h |
| 59 | 1.2.2.1 | Define the system structure and unify system features |  | 2d | 2015-10-05 | 2015-10-06 |  | 68d | 0d | start no earlier than 2015-10-05 | HoangLVQ [50%]; HoangNK; HuyTDH; KhanhKC; NhungNTH; QuyenNV | 48h |
| 60 | 1.2.2.2 | Research and make choice of System Architecture |  | 1d | 2015-10-07 | 2015-10-07 | 59 | 69d | 0d |  | HoangLVQ; HoangNK; HuyTDH; KhanhKC; NhungNTH; QuyenNV | 48h |
| 61 | 1.2.2.3 | Create System Architecture Design Document |  | 4d | 2015-10-08 | 2015-10-12 | 60 | 69d |  | finish no earlier than 2015-10-11 | HoangLVQ; HoangNK; HuyTDH; KhanhKC; NhungNTH; QuyenNV | 192h |
| 62 | 1.2.2.4 | Complete SAD ver1.0 | milestone | 0d | 2015-10-11 | 2015-10-11 |  | 72d |  | start no earlier than 2015-10-11 |  |  |
| 63 | 1.2.3 | **Implementation** |  | 28d | 2015-10-12 | 2015-11-08 |  | 43d |  |  |  | 1760h |
| 64 | 1.2.3.1 | **Training** |  | 2d | 2015-10-12 | 2015-10-13 |  | 45d | 0d |  |  | 144h |
| 65 | 1.2.3.1.1 | Study Node.js |  | 2d | 2015-10-12 | 2015-10-13 |  | 45d |  | start no earlier than 2015-10-12 | HoangLVQ; HoangNK | 32h |
| 66 | 1.2.3.1.2 | Study Angular.js |  | 2d | 2015-10-12 | 2015-10-13 |  | 45d |  | start no earlier than 2015-10-12 | HoangLVQ | 16h |
| 67 | 1.2.3.1.3 | Study Mobile Ionic |  | 2d | 2015-10-12 | 2015-10-13 |  | 45d |  | start no earlier than 2015-10-12 | HuyTDH; QuyenNV | 32h |
| 68 | 1.2.3.1.4 | Study test process & test related term |  | 2d | 2015-10-12 | 2015-10-13 |  | 45d |  | start no earlier than 2015-10-12 | KhanhKC; NhungNTH | 32h |
| 69 | 1.2.3.1.5 | Study material design |  | 2d | 2015-10-12 | 2015-10-13 |  | 45d |  | start no earlier than 2015-10-12 | HoangLVQ; KhanhKC | 32h |
| 70 | 1.2.3.2 | **Design UI** |  | 26d | 2015-10-14 | 2015-11-08 | 64 | 43d |  |  |  | 800h |
| 71 | 1.2.3.2.1 | Mobile UI |  | 20d | 2015-10-14 | 2015-11-08 |  | 43d |  | start no earlier than 2015-10-14 | HuyTDH; QuyenNV | 320h |
| 72 | 1.2.3.2.2 | Web UI |  | 20d | 2015-10-14 | 2015-11-08 |  | 43d |  | start no earlier than 2015-10-14 | HoangLVQ; HoangNK; KhanhKC | 480h |
| 73 | 1.2.3.2.3 | Complete UI design ver1.0 | milestone | 0d | 2015-11-08 | 2015-11-08 |  | 44d |  | start no earlier than 2015-11-08 | HoangLVQ; HoangNK; HuyTDH; KhanhKC; NhungNTH; QuyenNV |  |
| 74 | 1.2.3.3 | **Coding** |  | 26d | 2015-10-14 | 2015-11-08 |  | 43d |  |  |  | 816h |
| 75 | 1.2.3.3.1 | Coding Skeleton System |  | 5d | 2015-10-14 | 2015-10-20 |  | 62d |  | start no earlier than 2015-10-14 | HoangLVQ | 40h |
| 76 | 1.2.3.3.2 | **Coding modules** |  | 18d | 2015-10-22 | 2015-11-08 |  | 43d |  |  |  | 776h |
| 77 | 1.2.3.3.2.1 | Part1: NodeJS server |  | 14d | 2015-10-22 | 2015-11-08 |  | 43d |  | finish no earlier than 2015-11-08 | HoangLVQ; HuyTDH; HoangNK | 336h |
| 78 | 1.2.3.3.2.2 | Part2: Client-webapp Admin |  | 11d | 2015-10-27 | 2015-11-08 |  | 42d |  | finish no earlier than 2015-11-08 | KhanhKC; HoangLVQ; HoangNK | 264h |
| 79 | 1.2.3.3.2.3 | Part4: Client-mobileapp Shipper |  | 11d | 2015-10-27 | 2015-11-08 |  | 42d |  | start no earlier than 2015-10-27 | QuyenNV; HuyTDH | 176h |
| 80 | 1.2.3.3.3 | Complete source code ver1.0 | milestone | 0d | 2015-11-08 | 2015-11-08 |  | 44d |  | start no earlier than 2015-11-08 |  |  |

| ID | WBS | Task | Type | Duration | Start | Finish | Predecessors | Total slack | Free slack | Constraint | Resources | Work |
| --- | --- | --- | --- | --- | --- | --- | --- | --- | --- | --- | --- | --- |
| 81 | 1.2.4 | **Testing** |  | 7d | 2015-11-02 | 2015-11-08 |  | 40d |  |  |  | 112h |
| 82 | 1.2.4.1 | Create test plan |  | 5d | 2015-11-02 | 2015-11-06 |  | 40d | 0d | start no earlier than 2015-11-02 | NhungNTH; KhanhKC | 80h |
| 83 | 1.2.4.2 | Review test plan |  | 2d | 2015-11-07 | 2015-11-08 | 82 | 41d |  | finish no earlier than 2015-11-08 | HoangLVQ; KhanhKC | 32h |
| 84 | 1.2.4.3 | Complete Test Plan Document ver1.0 | milestone | 0d | 2015-11-08 | 2015-11-08 |  | 44d |  | start no earlier than 2015-11-08 |  |  |
| 85 | 1.2.5 | Submit Software Architecture Document to Supervisor | milestone | 0d | 2015-11-08 | 2015-11-08 |  | 44d |  | start no earlier than 2015-11-08 | HoangLVQ |  |
| 86 | 1.2.6 | **Evaluation** |  | 1d | 2015-11-09 | 2015-11-09 |  | 42d |  |  |  | 96h |
| 87 | 1.2.6.1 | Evaluate Current Server |  | 1d | 2015-11-09 | 2015-11-09 |  | 42d |  | start no earlier than 2015-11-09 | HoangLVQ; HoangNK; HuyTDH; KhanhKC; NhungNTH; QuyenNV | 48h |
| 88 | 1.2.6.2 | Set goals for next incement |  | 1d | 2015-11-09 | 2015-11-09 |  | 42d |  | start no earlier than 2015-11-09 | HoangLVQ; HoangNK; HuyTDH; KhanhKC; NhungNTH; QuyenNV | 48h |
| 89 | 1.3 | **Increment 2** |  | 15d | 2015-11-09 | 2015-11-23 |  | 28d |  |  |  | 1056h |
| 90 | 1.3.1 | **Project Plan** |  | 1d | 2015-11-09 | 2015-11-09 |  | 42d |  |  |  | 8h |
| 91 | 1.3.1.1 | Review and update Project Manage Plan |  | 1d | 2015-11-09 | 2015-11-09 |  | 42d |  | start no earlier than 2015-11-09 | HoangLVQ | 8h |
| 92 | 1.3.1.2 | Complete PMP document ver2.0 | milestone | 0d | 2015-11-09 | 2015-11-09 |  | 43d |  | start no earlier than 2015-11-09 |  |  |
| 93 | 1.3.2 | **System Architecture Design** |  | 8d | 2015-11-09 | 2015-11-16 |  | 35d |  |  |  | 288h |
| 94 | 1.3.2.1 | Review and Update System Architecture Design Document |  | 6d | 2015-11-09 | 2015-11-16 |  | 35d |  | start no earlier than 2015-11-09 | HoangLVQ; HoangNK; HuyTDH; KhanhKC; NhungNTH; QuyenNV | 288h |
| 95 | 1.3.2.2 | Complete SAD ver2.0 | milestone | 0d | 2015-11-16 | 2015-11-16 |  | 36d |  | start no earlier than 2015-11-16 |  |  |
| 96 | 1.3.3 | **Implementation** |  | 6d | 2015-11-17 | 2015-11-22 |  | 28d |  |  |  | 600h |
| 97 | 1.3.3.1 | Design UI |  | 5d | 2015-11-17 | 2015-11-22 |  | 28d |  | finish no earlier than 2015-11-22 | HoangLVQ; HoangNK; HuyTDH; KhanhKC; NhungNTH; QuyenNV | 240h |
| 98 | 1.3.3.2 | Complete UI design ver2.0 | milestone | 0d | 2015-11-22 | 2015-11-22 |  | 30d |  | start no earlier than 2015-11-22 | HoangLVQ; HoangNK; HuyTDH; KhanhKC; NhungNTH; QuyenNV |  |
| 99 | 1.3.3.3 | **Coding** |  | 6d | 2015-11-17 | 2015-11-22 |  | 28d |  |  |  | 360h |
| 100 | 1.3.3.3.1 | **Coding modules** |  | 6d | 2015-11-17 | 2015-11-22 |  | 28d |  |  |  | 360h |
| 101 | 1.3.3.3.1.1 | Part1: NodeJS server |  | 5d | 2015-11-17 | 2015-11-22 |  | 28d |  | start no earlier than 2015-11-17 | HoangLVQ; HoangNK; KhanhKC | 120h |
| 102 | 1.3.3.3.1.2 | Part2: Client-webapp Admin |  | 5d | 2015-11-17 | 2015-11-22 |  | 28d |  | start no earlier than 2015-11-17 | HoangLVQ; HoangNK | 80h |
| 103 | 1.3.3.3.1.3 | Part3: Client-webapp Store |  | 5d | 2015-11-17 | 2015-11-22 |  | 28d |  | finish no earlier than 2015-11-22 | HoangLVQ; KhanhKC | 80h |
| 104 | 1.3.3.3.1.4 | Part4: Client-mobileapp Shipper |  | 5d | 2015-11-17 | 2015-11-22 |  | 28d |  | finish no earlier than 2015-11-22 | HuyTDH; QuyenNV | 80h |
| 105 | 1.3.3.3.2 | Complete source code ver2.0 | milestone | 0d | 2015-11-22 | 2015-11-22 |  | 30d |  | start no earlier than 2015-11-22 |  |  |

| ID | WBS | Task | Type | Duration | Start | Finish | Total slack | Constraint | Resources | Work |
| --- | --- | --- | --- | --- | --- | --- | --- | --- | --- | --- |
| 106 | 1.3.4 | **Testing** |  | 7d | 2015-11-16 | 2015-11-22 | 28d |  |  | 104h |
| 107 | 1.3.4.1 | Review and update Test Plan |  | 1d | 2015-11-16 | 2015-11-16 | 35d | finish no earlier than 2015-11-16 | NhungNTH | 8h |
| 108 | 1.3.4.2 | Create new and execute Unit Test Cases |  | 6d | 2015-11-16 | 2015-11-22 | 28d | finish no earlier than 2015-11-22 | NhungNTH; KhanhKC | 96h |
| 109 | 1.3.4.3 | Complete Test Plan Document ver2.0 | milestone | 0d | 2015-11-16 | 2015-11-16 | 36d | start no earlier than 2015-11-16 |  |  |
| 110 | 1.3.5 | Submit Souce Code & Test Document to Supervisor | milestone | 0d | 2015-11-22 | 2015-11-22 | 30d | start no earlier than 2015-11-22 | HoangLVQ |  |
| 111 | 1.3.6 | **Evaluation** |  | 1d | 2015-11-23 | 2015-11-23 | 28d |  |  | 56h |
| 112 | 1.3.6.1 | Evaluate Current System |  | 1d | 2015-11-23 | 2015-11-23 | 28d | start no earlier than 2015-11-23 | HoangLVQ; HoangNK; HuyTDH; KhanhKC; NhungNTH; QuyenNV | 48h |
| 113 | 1.3.6.2 | Set goals for next incement |  | 1d | 2015-11-23 | 2015-11-23 | 28d | start no earlier than 2015-11-23 | HoangLVQ | 8h |
| 114 | 1.4 | **Increment 3** |  | 9d | 2015-11-23 | 2015-12-01 | 20d |  |  | 512h |
| 115 | 1.4.1 | **Project Plan** |  | 1d | 2015-11-23 | 2015-11-23 | 28d |  |  | 8h |
| 116 | 1.4.1.1 | Review and update Project Manage Plan |  | 1d | 2015-11-23 | 2015-11-23 | 28d | start no earlier than 2015-11-23 | HoangLVQ | 8h |
| 117 | 1.4.1.2 | Complete PMP document ver3.0 | milestone | 0d | 2015-11-23 | 2015-11-23 | 29d | start no earlier than 2015-11-23 |  |  |
| 118 | 1.4.2 | **System Architecture Design** |  | 1d | 2015-11-23 | 2015-11-23 | 28d |  |  | 48h |
| 119 | 1.4.2.1 | Review and Update System Architecture Design Document |  | 1d | 2015-11-23 | 2015-11-23 | 28d | finish no earlier than 2015-11-23 | HoangLVQ; HoangNK; HuyTDH; KhanhKC; NhungNTH; QuyenNV | 48h |
| 120 | 1.4.2.2 | Complete Final SAD Document | milestone | 0d | 2015-11-23 | 2015-11-23 | 29d | start no earlier than 2015-11-23 | HoangLVQ; HoangNK; HuyTDH; KhanhKC; NhungNTH; QuyenNV |  |
| 121 | 1.4.3 | **Implementation** |  | 6d | 2015-11-24 | 2015-11-29 | 21d |  |  | 360h |
| 122 | 1.4.3.1 | Design UI |  | 5d | 2015-11-24 | 2015-11-28 | 23d | start no earlier than 2015-11-24 |  |  |
| 123 | 1.4.3.2 | Complete UI design ver Final | milestone | 0d | 2015-11-29 | 2015-11-29 | 23d | start no earlier than 2015-11-29 |  |  |
| 124 | Complete UI design ver1.0 | **Coding** |  | 6d | 2015-11-24 | 2015-11-29 | 21d |  |  | 360h |
| 125 | 1.4.3.3.1 | **Coding modules** |  | 6d | 2015-11-24 | 2015-11-29 | 21d |  |  | 360h |
| 126 | 1.4.3.3.1.1 | Part1: NodeJS server |  | 5d | 2015-11-24 | 2015-11-29 | 21d | start no earlier than 2015-11-24 | HoangLVQ; HoangNK; KhanhKC; HuyTDH; QuyenNV | 200h |
| 127 | 1.4.3.3.1.2 | Part3: Client-webapp Store |  | 5d | 2015-11-24 | 2015-11-29 | 21d | start no earlier than 2015-11-24 | HoangLVQ; KhanhKC | 80h |
| 128 | 1.4.3.3.1.3 | Part4: Client-MobileApp Shipper |  | 5d | 2015-11-24 | 2015-11-29 | 21d | start no earlier than 2015-11-24 | QuyenNV; HuyTDH | 80h |
| 129 | 1.4.3.3.2 | Complete Final Souce Code | milestone | 0d | 2015-11-29 | 2015-11-29 | 23d | start no earlier than 2015-11-29 |  |  |

| ID | WBS | Task | Type | Duration | Start | Finish | Predecessors | Total slack | Free slack | Constraint | Resources | Work |
| --- | --- | --- | --- | --- | --- | --- | --- | --- | --- | --- | --- | --- |
| 130 | 1.4.4 | **Testing** |  | 6d | 2015-11-24 | 2015-11-29 |  | 22d |  |  | NhungNTH | 40h |
| 131 | 1.4.4.1 | Review and update Test Plan |  | 1d | 2015-11-24 | 2015-11-24 |  | 27d |  | start no earlier than 2015-11-24 |  |  |
| 132 | 1.4.4.2 | Create new and execute Unit Test Cases |  | 5d | 2015-11-25 | 2015-11-29 |  | 22d |  | finish no earlier than 2015-11-29 |  |  |
| 133 | 1.4.4.3 | Complete Test Plan Document ver3.0 | milestone | 0d | 2015-11-24 | 2015-11-24 |  | 28d |  | start no earlier than 2015-11-24 |  |  |
| 134 | 1.4.5 | Submit source code final to supervisor | milestone | 0d | 2015-11-29 | 2015-11-29 |  | 23d |  | start no earlier than 2015-11-29 | HoangLVQ |  |
| 135 | 1.4.6 | **Evaluation** |  | 1d | 2015-12-01 | 2015-12-01 |  | 20d |  |  |  | 56h |
| 136 | 1.4.6.1 | Evaluate Current System |  | 1d | 2015-12-01 | 2015-12-01 |  | 20d |  | start no earlier than 2015-12-01 | HoangLVQ; HoangNK; HuyTDH; KhanhKC; NhungNTH; QuyenNV | 48h |
| 137 | 1.4.6.2 | Set goals for next incement |  | 1d | 2015-12-01 | 2015-12-01 |  | 20d |  | start no earlier than 2015-12-01 | HoangLVQ | 8h |
| 138 | 1.5 | **Increment 4** |  | 17d | 2015-12-01 | 2015-12-17 |  | 4d |  |  |  | 632h |
| 139 | 1.5.1 | **Planning** |  | 1d | 2015-12-01 | 2015-12-01 |  | 20d |  |  |  | 8h |
| 140 | 1.5.1.1 | Review and update Project Manage Plan |  | 1d | 2015-12-01 | 2015-12-01 |  | 20d |  | start no earlier than 2015-12-01 | HoangLVQ | 8h |
| 141 | 1.5.1.2 | Complete Final PMP document | milestone | 0d | 2015-12-01 | 2015-12-01 |  | 21d |  | start no earlier than 2015-12-01 |  |  |
| 142 | 1.5.2 | **Implementation** |  | 2d | 2015-12-01 | 2015-12-02 |  | 17d |  |  |  | 96h |
| 143 | 1.5.2.1 | **Complete all documents** |  | 2d | 2015-12-01 | 2015-12-02 |  | 17d |  |  |  | 96h |
| 144 | 1.5.2.1.1 | Refine entity system |  | 2d | 2015-12-01 | 2015-12-02 |  | 17d |  | start no earlier than 2015-12-01 | HoangLVQ; HoangNK; QuyenNV; HuyTDH | 64h |
| 145 | 1.5.2.1.2 | Create user manual |  | 2d | 2015-12-01 | 2015-12-02 |  | 17d |  | start no earlier than 2015-12-01 | KhanhKC; NhungNTH | 32h |
| 146 | 1.5.2.1.3 | Complete User Manual | milestone | 0d | 2015-12-02 | 2015-12-02 |  | 20d |  | start no earlier than 2015-12-02 |  |  |
| 147 | 1.5.3 | **Testing** |  | 2d | 2015-12-03 | 2015-12-04 |  | 15d |  |  |  | 32h |
| 148 | 1.5.3.1 | Create and execute system test System |  | 2d | 2015-12-03 | 2015-12-04 |  | 15d |  | start no earlier than 2015-12-03 | NhungNTH; KhanhKC | 32h |
| 149 | 1.5.3.2 | Complete final report of testing | milestone | 0d | 2015-12-04 | 2015-12-04 |  | 18d |  | start no earlier than 2015-12-04 | NhungNTH; KhanhKC |  |
| 150 | 1.5.4 | **Create final report** |  | 1d | 2015-12-05 | 2015-12-06 |  | 16d |  |  |  | 16h |
| 151 | 1.5.4.1 | Create final report |  | 1d | 2015-12-05 | 2015-12-05 |  | 16d | 0d | start no earlier than 2015-12-05 | HoangLVQ; KhanhKC | 16h |
| 152 | 1.5.4.2 | Complete Final Report | milestone | 0d | 2015-12-05 | 2015-12-05 |  | 17d |  | start no earlier than 2015-12-05 |  |  |
| 153 | 1.5.4.3 | Get supervisor's approve on final report | milestone | 0d | 2015-12-05 | 2015-12-05 | 151 | 16d |  |  | HoangLVQ |  |
| 154 | 1.5.4.4 | Submit final report to FPT University | milestone | 0d | 2015-12-06 | 2015-12-06 |  | 16d |  | start no earlier than 2015-12-06 | HoangLVQ |  |
| 155 | 1.5.5 | Training Presentation |  | 10d | 2015-12-07 | 2015-12-17 |  | 2d |  | start no earlier than 2015-12-07 | HoangLVQ; HoangNK; HuyTDH; KhanhKC; NhungNTH; QuyenNV | 480h |

| ID | WBS | Task | Duration | Start | Finish | Total slack | Constraint | Resources | Work |
| --- | --- | --- | --- | --- | --- | --- | --- | --- | --- |
| 156 | 1.6 | **Closing** | 1d | 2015-12-21 | 2015-12-21 | 0d |  |  | 48h |
| 157 | 1.6.1 | Presentation | 1d | 2015-12-21 | 2015-12-21 | 0d | start no earlier than 2015-12-21 | HoangLVQ; HoangNK; HuyTDH; KhanhKC; NhungNTH; QuyenNV | 48h |
