# Schedules

Schedule from MS Project, 2015-09-07 to 2015-12-21.
Grizli777

## Calendars

- Standard: Mon-Fri 08:00-12:00, 13:00-17:00; Sat-Sun off. Exceptions (off unless hours are given): 2015-09-12 to 2015-09-13 08:00-12:00, 13:00-17:00, 2015-09-19 to 2015-09-20 08:00-12:00, 13:00-17:00, 2015-10-04 08:00-12:00, 13:00-17:00, 2015-10-11 08:00-12:00, 13:00-17:00, 2015-11-07 to 2015-11-08 08:00-12:00, 13:00-17:00, 2015-11-22 08:00-12:00, 13:00-17:00, 2015-11-29 08:00-12:00, 13:00-17:00, 2015-12-05 to 2015-12-06 08:00-12:00, 13:00-17:00, 2015-12-12 08:00-12:00, 13:00-17:00.

## Resources

| Resource |
| --- |
| TEAM |
| KhanhKC |
| HoangNK |
| QuyenNV |
| HuyTDH |
| NhungNTH |
| HoangLVQ |

## Schedule

| ID | WBS | Task | Type | Duration | Start | Finish | Predecessors | Total slack | Free slack | Constraint | Resources | Work |
| --- | --- | --- | --- | --- | --- | --- | --- | --- | --- | --- | --- | --- |
| 1 | 1 | **Super Shipper System** |  | 89d | 2015-09-07 | 2015-12-21 |  | 0d |  |  |  | 3824h |
| 2 | 1.1 | **Initiation** |  | 25d | 2015-09-07 | 2015-10-04 |  | 64d |  |  |  | 632h |
| 3 | 1.1.1 | Form up team roles |  | 1d | 2015-09-07 | 2015-09-07 |  | 88d |  | finish no earlier than 2015-09-07 | TEAM | 8h |
| 4 | 1.1.2 | Uniform idea meeting |  | 1d | 2015-09-07 | 2015-09-07 |  | 88d |  | start no earlier than 2015-09-07 | TEAM | 8h |
| 5 | 1.1.3 | **Project Clarification** |  | 2d | 2015-09-08 | 2015-09-09 |  | 86d |  |  |  | 32h |
| 6 | 1.1.3.1 | Clarify project scope |  | 0.5d | 2015-09-08 | 2015-09-08 |  | 87.5d |  | start no earlier than 2015-09-08 | TEAM | 4h |
| 7 | 1.1.3.2 | Clarify techinical requirements |  | 0.5d | 2015-09-08 | 2015-09-08 |  | 87.5d |  | start no earlier than 2015-09-08 | TEAM | 4h |
| 8 | 1.1.3.3 | Clarify rules in Team |  | 0.5d | 2015-09-08 | 2015-09-08 |  | 87.5d |  | start no earlier than 2015-09-08 | TEAM | 4h |
| 9 | 1.1.3.4 | Clarify working enviroments |  | 0.5d | 2015-09-08 | 2015-09-08 |  | 87.5d |  | start no earlier than 2015-09-08 | TEAM | 4h |
| 10 | 1.1.3.5 | Survey practise |  | 2d | 2015-09-08 | 2015-09-09 |  | 86d |  | start no earlier than 2015-09-08 | TEAM | 16h |
| 11 | 1.1.4 | **Meeting with supervisor** |  | 0.5d | 2015-09-09 | 2015-09-09 |  | 86.5d |  |  |  | 16h |
| 12 | 1.1.4.1 | Review project's idea |  | 0.5d | 2015-09-09 | 2015-09-09 |  | 86.5d |  | start no earlier than 2015-09-09 | TEAM | 4h |
| 13 | 1.1.4.2 | Appprove Project's idea | milestone | 0d | 2015-09-09 | 2015-09-09 |  | 87d |  | start no earlier than 2015-09-09 |  |  |
| 14 | 1.1.4.3 | Discuss on technique to be used |  | 0.5d | 2015-09-09 | 2015-09-09 |  | 86.5d |  | start no earlier than 2015-09-09 | TEAM | 4h |
| 15 | 1.1.4.4 | Uniform meeting schedule & project's deliverables |  | 0.5d | 2015-09-09 | 2015-09-09 |  | 86.5d |  | start no earlier than 2015-09-09 | TEAM | 4h |
| 16 | 1.1.4.5 | Clarify the tasks on each report |  | 0.5d | 2015-09-09 | 2015-09-09 |  | 86.5d |  | start no earlier than 2015-09-09 | TEAM | 4h |
| 17 | 1.1.5 | **Project Introduction** |  | 4d | 2015-09-10 | 2015-09-13 |  | 82d |  |  |  | 88h |
| 18 | 1.1.5.1 | Survery practise |  | 1d | 2015-09-10 | 2015-09-10 |  | 85d |  | start no earlier than 2015-09-10 | TEAM | 8h |
| 19 | 1.1.5.2 | Research Background |  | 1d | 2015-09-11 | 2015-09-11 |  | 84d |  | start no earlier than 2015-09-11 | KhanhKC; HoangNK; QuyenNV | 24h |
| 20 | 1.1.5.3 | Research Competitor |  | 1d | 2015-09-11 | 2015-09-11 |  | 84d |  | start no earlier than 2015-09-11 | HuyTDH; NhungNTH | 16h |
| 21 | 1.1.5.4 | Research Proposal |  | 1d | 2015-09-11 | 2015-09-11 |  | 82d | 0d | start no earlier than 2015-09-11 | HoangLVQ | 8h |
| 22 | 1.1.5.5 | Create project introduction document |  | 2d | 2015-09-12 | 2015-09-13 | 21 | 82d |  | start no earlier than 2015-09-12 | HoangLVQ; KhanhKC | 32h |
| 23 | 1.1.5.6 | Complete introduction document | milestone | 0d | 2015-09-13 | 2015-09-13 | 24 | 83d |  |  |  |  |
| 24 | 1.1.5.7 | Submit introduction document to supervisor | milestone | 0d | 2015-09-13 | 2015-09-13 |  | 83d | 0d | start no earlier than 2015-09-13 | HoangLVQ |  |

| ID | WBS | Task | Type | Duration | Start | Finish | Predecessors | Total slack | Free slack | Constraint | Resources | Work |
| --- | --- | --- | --- | --- | --- | --- | --- | --- | --- | --- | --- | --- |
| 25 | 1.1.6 | **Planning** |  | 6d | 2015-09-14 | 2015-09-20 |  | 76d |  |  |  | 48h |
| 26 | 1.1.6.1 | Research and make choice process model |  | 2d | 2015-09-14 | 2015-09-15 |  | 76d | 0d | start no earlier than 2015-09-14 | HoangLVQ | 16h |
| 27 | 1.1.6.2 | Create work schedule |  | 1d | 2015-09-16 | 2015-09-16 | 26 | 76d | 0d |  | HoangLVQ | 8h |
| 28 | 1.1.6.3 | Create project manage Plan document |  | 2d | 2015-09-17 | 2015-09-18 | 27 | 76d | 0d |  | HoangLVQ | 16h |
| 29 | 1.1.6.4 | Review and update project manage plan document |  | 1d | 2015-09-19 | 2015-09-19 | 28 | 76d |  |  | HoangLVQ | 8h |
| 30 | 1.1.6.5 | Complete PMP document ver1.0 | milestone | 0d | 2015-09-20 | 2015-09-20 | 31 | 76d |  |  |  |  |
| 31 | 1.1.6.6 | Submit PMP document to supervisor | milestone | 0d | 2015-09-20 | 2015-09-20 |  | 76d | 0d | start no earlier than 2015-09-20 | HoangLVQ |  |
| 32 | 1.1.7 | **Requirement** |  | 18d | 2015-09-14 | 2015-10-04 |  | 64d |  |  |  | 432h |
| 33 | 1.1.7.1 | Define functions of system |  | 1d | 2015-09-14 | 2015-09-14 |  | 64d | 0d | start no earlier than 2015-09-14 | TEAM | 8h |
| 34 | 1.1.7.2 | **Create user cases** |  | 6d | 2015-09-15 | 2015-09-20 | 33 | 64d | 0d |  |  | 288h |
| 35 | 1.1.7.2.1 | User Cases: Shipper |  | 6d | 2015-09-15 | 2015-09-20 |  | 64d |  |  | HuyTDH; QuyenNV | 96h |
| 36 | 1.1.7.2.2 | User Cases: Store |  | 6d | 2015-09-15 | 2015-09-20 |  | 64d |  |  | HoangLVQ; KhanhKC | 96h |
| 37 | 1.1.7.2.3 | User Cases: Admin |  | 6d | 2015-09-15 | 2015-09-20 |  | 64d |  | start no earlier than 2015-09-15 | HoangLVQ; HoangNK | 96h |
| 38 | 1.1.7.3 | Design Mockup screens |  | 6d | 2015-09-15 | 2015-09-20 |  | 75d |  | finish no earlier than 2015-09-20 | TEAM | 48h |
| 39 | 1.1.7.4 | Create Software Requirement Specification Document |  | 11d | 2015-09-21 | 2015-10-04 | 34 | 64d | 0d | finish no earlier than 2015-10-03 | TEAM | 88h |
| 40 | 1.1.7.5 | Complete SRS document | milestone | 0d | 2015-10-04 | 2015-10-04 |  | 65d |  | start no earlier than 2015-10-04 |  |  |
| 41 | 1.1.7.6 | Submit SRS document to supervisor | milestone | 0d | 2015-10-04 | 2015-10-04 | 39 | 64d |  | start no earlier than 2015-10-04 | HoangLVQ |  |
| 42 | 1.2 | **Increment 1** |  | 29d | 2015-10-05 | 2015-11-09 |  | 35d |  |  |  | 1944h |
| 43 | 1.2.1 | **Project Plan** |  | 1d | 2015-10-05 | 2015-10-05 |  | 63d |  |  |  | 8h |
| 44 | 1.2.1.1 | Review and update Project Manage Plan |  | 1d | 2015-10-05 | 2015-10-05 |  | 63d |  | start no earlier than 2015-10-05 | HoangLVQ | 8h |
| 45 | 1.2.2 | **System Architecture Design** |  | 6d | 2015-10-05 | 2015-10-11 |  | 58d |  |  |  | 48h |
| 46 | 1.2.2.1 | Define the system structure and unify system features |  | 1d | 2015-10-05 | 2015-10-05 |  | 58d | 0d | start no earlier than 2015-10-05 | TEAM | 8h |
| 47 | 1.2.2.2 | Research and make choice of System Architecture |  | 1d | 2015-10-06 | 2015-10-06 | 46 | 58d | 0d |  | TEAM | 8h |
| 48 | 1.2.2.3 | Create System Architecture Design Document |  | 4d | 2015-10-07 | 2015-10-11 | 47 | 58d |  | finish no earlier than 2015-10-11 | TEAM | 32h |
| 49 | 1.2.2.4 | Complete SAD ver1.0 | milestone | 0d | 2015-10-11 | 2015-10-11 |  | 59d |  | start no earlier than 2015-10-11 |  |  |

| ID | WBS | Task | Type | Duration | Start | Finish | Predecessors | Total slack | Free slack | Constraint | Resources | Work |
| --- | --- | --- | --- | --- | --- | --- | --- | --- | --- | --- | --- | --- |
| 50 | 1.2.3 | **Implementation** |  | 22d | 2015-10-12 | 2015-11-08 |  | 36d |  |  |  | 1760h |
| 51 | 1.2.3.1 | **Training** |  | 2d | 2015-10-12 | 2015-10-13 |  | 36d | 0d |  |  | 144h |
| 52 | 1.2.3.1.1 | Study Node.js |  | 2d | 2015-10-12 | 2015-10-13 |  | 36d |  | start no earlier than 2015-10-12 | HoangLVQ; HoangNK | 32h |
| 53 | 1.2.3.1.2 | Study Angular.js |  | 2d | 2015-10-12 | 2015-10-13 |  | 36d |  | start no earlier than 2015-10-12 | HoangLVQ | 16h |
| 54 | 1.2.3.1.3 | Study Mobile Ionic |  | 2d | 2015-10-12 | 2015-10-13 |  | 36d |  | start no earlier than 2015-10-12 | HuyTDH; QuyenNV | 32h |
| 55 | 1.2.3.1.4 | Study test process & test related term |  | 2d | 2015-10-12 | 2015-10-13 |  | 36d |  | start no earlier than 2015-10-12 | KhanhKC; NhungNTH | 32h |
| 56 | 1.2.3.1.5 | Study material design |  | 2d | 2015-10-12 | 2015-10-13 |  | 36d |  | start no earlier than 2015-10-12 | HoangLVQ; KhanhKC | 32h |
| 57 | 1.2.3.2 | **Design UI** |  | 20d | 2015-10-14 | 2015-11-08 | 51 | 36d |  |  |  | 800h |
| 58 | 1.2.3.2.1 | Mobile UI |  | 20d | 2015-10-14 | 2015-11-08 |  | 36d |  | start no earlier than 2015-10-14 | HuyTDH; QuyenNV | 320h |
| 59 | 1.2.3.2.2 | Web UI |  | 20d | 2015-10-14 | 2015-11-08 |  | 36d |  | start no earlier than 2015-10-14 | HoangLVQ; HoangNK; KhanhKC | 480h |
| 60 | 1.2.3.2.3 | Complete UI design ver1.0 | milestone | 0d | 2015-11-08 | 2015-11-08 |  | 37d |  | start no earlier than 2015-11-08 | TEAM |  |
| 61 | 1.2.3.3 | **Coding** |  | 20d | 2015-10-14 | 2015-11-08 |  | 36d |  |  |  | 816h |
| 62 | 1.2.3.3.1 | Coding Skeleton System |  | 5d | 2015-10-14 | 2015-10-20 |  | 51d |  | start no earlier than 2015-10-14 | HoangLVQ | 40h |
| 63 | 1.2.3.3.2 | **Coding modules** |  | 14d | 2015-10-22 | 2015-11-08 |  | 36d |  |  |  | 776h |
| 64 | 1.2.3.3.2.1 | Part1: NodeJS server |  | 14d | 2015-10-22 | 2015-11-08 |  | 36d |  | finish no earlier than 2015-11-08 | HoangLVQ; HuyTDH; HoangNK | 336h |
| 65 | 1.2.3.3.2.2 | Part2: Client-webapp Admin |  | 11d | 2015-10-27 | 2015-11-08 |  | 36d |  | finish no earlier than 2015-11-08 | KhanhKC; HoangLVQ; HoangNK | 264h |
| 66 | 1.2.3.3.2.3 | Part4: Client-mobileapp Shipper |  | 11d | 2015-10-27 | 2015-11-08 |  | 36d |  | start no earlier than 2015-10-27 | QuyenNV; HuyTDH | 176h |
| 67 | 1.2.3.3.3 | Complete source code ver1.0 | milestone | 0d | 2015-11-08 | 2015-11-08 |  | 37d |  | start no earlier than 2015-11-08 |  |  |
| 68 | 1.2.4 | **Testing** |  | 7d | 2015-11-02 | 2015-11-08 |  | 36d |  |  |  | 112h |
| 69 | 1.2.4.1 | Create test plan |  | 5d | 2015-11-02 | 2015-11-06 |  | 36d | 0d | start no earlier than 2015-11-02 | NhungNTH; KhanhKC | 80h |
| 70 | 1.2.4.2 | Review test plan |  | 2d | 2015-11-07 | 2015-11-08 | 69 | 36d |  | finish no earlier than 2015-11-08 | HoangLVQ; KhanhKC | 32h |
| 71 | 1.2.4.3 | Complete Test Plan Document ver1.0 | milestone | 0d | 2015-11-08 | 2015-11-08 |  | 37d |  | start no earlier than 2015-11-08 |  |  |
| 72 | 1.2.5 | Submit Software Architecture Document to Supervisor | milestone | 0d | 2015-11-08 | 2015-11-08 |  | 37d |  | start no earlier than 2015-11-08 | HoangLVQ |  |
| 73 | 1.2.6 | **Evaluation** |  | 1d | 2015-11-09 | 2015-11-09 |  | 35d |  |  |  | 16h |
| 74 | 1.2.6.1 | Evaluate Current Server |  | 1d | 2015-11-09 | 2015-11-09 |  | 35d |  | start no earlier than 2015-11-09 | TEAM | 8h |
| 75 | 1.2.6.2 | Set goals for next incement |  | 1d | 2015-11-09 | 2015-11-09 |  | 35d |  | start no earlier than 2015-11-09 | TEAM | 8h |

| ID | WBS | Task | Type | Duration | Start | Finish | Total slack | Constraint | Resources | Work |
| --- | --- | --- | --- | --- | --- | --- | --- | --- | --- | --- |
| 76 | 1.3 | **Increment 2** |  | 12d | 2015-11-09 | 2015-11-23 | 24d |  |  | 576h |
| 77 | 1.3.1 | **Project Plan** |  | 1d | 2015-11-09 | 2015-11-09 | 35d |  |  | 8h |
| 78 | 1.3.1.1 | Review and update Project Manage Plan |  | 1d | 2015-11-09 | 2015-11-09 | 35d | start no earlier than 2015-11-09 | HoangLVQ | 8h |
| 79 | 1.3.1.2 | Complete PMP document ver2.0 | milestone | 0d | 2015-11-09 | 2015-11-09 | 36d | start no earlier than 2015-11-09 |  |  |
| 80 | 1.3.2 | **System Architecture Design** |  | 6d | 2015-11-09 | 2015-11-16 | 30d |  |  | 48h |
| 81 | 1.3.2.1 | Review and Update System Architecture Design Document |  | 6d | 2015-11-09 | 2015-11-16 | 30d | start no earlier than 2015-11-09 | TEAM | 48h |
| 82 | 1.3.2.2 | Complete SAD ver2.0 | milestone | 0d | 2015-11-16 | 2015-11-16 | 31d | start no earlier than 2015-11-16 |  |  |
| 83 | 1.3.3 | **Implementation** |  | 5d | 2015-11-17 | 2015-11-22 | 25d |  |  | 400h |
| 84 | 1.3.3.1 | Design UI |  | 5d | 2015-11-17 | 2015-11-22 | 25d | finish no earlier than 2015-11-22 | TEAM | 40h |
| 85 | 1.3.3.2 | Complete UI design ver2.0 | milestone | 0d | 2015-11-22 | 2015-11-22 | 26d | start no earlier than 2015-11-22 | TEAM |  |
| 86 | 1.3.3.3 | **Coding** |  | 5d | 2015-11-17 | 2015-11-22 | 25d |  |  | 360h |
| 87 | 1.3.3.3.1 | **Coding modules** |  | 5d | 2015-11-17 | 2015-11-22 | 25d |  |  | 360h |
| 88 | 1.3.3.3.1.1 | Part1: NodeJS server |  | 5d | 2015-11-17 | 2015-11-22 | 25d | start no earlier than 2015-11-17 | HoangLVQ; HoangNK; KhanhKC | 120h |
| 89 | 1.3.3.3.1.2 | Part2: Client-webapp Admin |  | 5d | 2015-11-17 | 2015-11-22 | 25d | start no earlier than 2015-11-17 | HoangLVQ; HoangNK | 80h |
| 90 | 1.3.3.3.1.3 | Part3: Client-webapp Store |  | 5d | 2015-11-17 | 2015-11-22 | 25d | finish no earlier than 2015-11-22 | HoangLVQ; KhanhKC | 80h |
| 91 | 1.3.3.3.1.4 | Part4: Client-mobileapp Shipper |  | 5d | 2015-11-17 | 2015-11-22 | 25d | finish no earlier than 2015-11-22 | HuyTDH; QuyenNV | 80h |
| 92 | 1.3.3.3.2 | Complete source code ver2.0 | milestone | 0d | 2015-11-22 | 2015-11-22 | 26d | start no earlier than 2015-11-22 |  |  |
| 93 | 1.3.4 | **Testing** |  | 6d | 2015-11-16 | 2015-11-22 | 25d |  |  | 104h |
| 94 | 1.3.4.1 | Review and update Test Plan |  | 1d | 2015-11-16 | 2015-11-16 | 30d | finish no earlier than 2015-11-16 | NhungNTH | 8h |
| 95 | 1.3.4.2 | Create new and execute Unit Test Cases |  | 6d | 2015-11-16 | 2015-11-22 | 25d | finish no earlier than 2015-11-22 | NhungNTH; KhanhKC | 96h |
| 96 | 1.3.4.3 | Complete Test Plan Document ver2.0 | milestone | 0d | 2015-11-16 | 2015-11-16 | 31d | start no earlier than 2015-11-16 |  |  |
| 97 | 1.3.5 | Submit Souce Code & Test Document to Supervisor | milestone | 0d | 2015-11-22 | 2015-11-22 | 26d | start no earlier than 2015-11-22 | HoangLVQ |  |
| 98 | 1.3.6 | **Evaluation** |  | 1d | 2015-11-23 | 2015-11-23 | 24d |  |  | 16h |
| 99 | 1.3.6.1 | Evaluate Current System |  | 1d | 2015-11-23 | 2015-11-23 | 24d | start no earlier than 2015-11-23 | TEAM | 8h |
| 100 | 1.3.6.2 | Set goals for next incement |  | 1d | 2015-11-23 | 2015-11-23 | 24d | start no earlier than 2015-11-23 | HoangLVQ | 8h |

| ID | WBS | Task | Type | Duration | Start | Finish | Total slack | Constraint | Resources | Work |
| --- | --- | --- | --- | --- | --- | --- | --- | --- | --- | --- |
| 101 | 1.4 | **Increment 3** |  | 8d | 2015-11-23 | 2015-12-01 | 17d |  |  | 432h |
| 102 | 1.4.1 | **Project Plan** |  | 1d | 2015-11-23 | 2015-11-23 | 24d |  |  | 8h |
| 103 | 1.4.1.1 | Review and update Project Manage Plan |  | 1d | 2015-11-23 | 2015-11-23 | 24d | start no earlier than 2015-11-23 | HoangLVQ | 8h |
| 104 | 1.4.1.2 | Complete PMP document ver3.0 | milestone | 0d | 2015-11-23 | 2015-11-23 | 25d | start no earlier than 2015-11-23 |  |  |
| 105 | 1.4.2 | **System Architecture Design** |  | 1d | 2015-11-23 | 2015-11-23 | 24d |  |  | 8h |
| 106 | 1.4.2.1 | Review and Update System Architecture Design Document |  | 1d | 2015-11-23 | 2015-11-23 | 24d | finish no earlier than 2015-11-23 | TEAM | 8h |
| 107 | 1.4.2.2 | Complete Final SAD Document | milestone | 0d | 2015-11-23 | 2015-11-23 | 25d | start no earlier than 2015-11-23 | TEAM |  |
| 108 | 1.4.3 | **Implementation** |  | 5d | 2015-11-24 | 2015-11-29 | 19d |  |  | 360h |
| 109 | 1.4.3.1 | Design UI |  | 5d | 2015-11-24 | 2015-11-29 | 19d | start no earlier than 2015-11-24 |  |  |
| 110 | 1.4.3.2 | Complete UI design ver Final | milestone | 0d | 2015-11-29 | 2015-11-29 | 20d | start no earlier than 2015-11-29 |  |  |
| 111 | Complete UI design ver1.0 | **Coding** |  | 5d | 2015-11-24 | 2015-11-29 | 19d |  |  | 360h |
| 112 | 1.4.3.3.1 | **Coding modules** |  | 5d | 2015-11-24 | 2015-11-29 | 19d |  |  | 360h |
| 113 | 1.4.3.3.1.1 | Part1: NodeJS server |  | 5d | 2015-11-24 | 2015-11-29 | 19d | start no earlier than 2015-11-24 | HoangLVQ; HoangNK; KhanhKC; HuyTDH; QuyenNV | 200h |
| 114 | 1.4.3.3.1.2 | Part3: Client-webapp Store |  | 5d | 2015-11-24 | 2015-11-29 | 19d | start no earlier than 2015-11-24 | HoangLVQ; KhanhKC | 80h |
| 115 | 1.4.3.3.1.3 | Part4: Client-MobileApp Shipper |  | 5d | 2015-11-24 | 2015-11-29 | 19d | start no earlier than 2015-11-24 | QuyenNV; HuyTDH | 80h |
| 116 | 1.4.3.3.2 | Complete Final Souce Code | milestone | 0d | 2015-11-29 | 2015-11-29 | 20d | start no earlier than 2015-11-29 |  |  |
| 117 | 1.4.4 | **Testing** |  | 5d | 2015-11-24 | 2015-11-29 | 19d |  | NhungNTH | 40h |
| 118 | 1.4.4.1 | Review and update Test Plan |  | 1d | 2015-11-24 | 2015-11-24 | 23d | start no earlier than 2015-11-24 |  |  |
| 119 | 1.4.4.2 | Create new and execute Unit Test Cases |  | 5d | 2015-11-24 | 2015-11-29 | 19d | finish no earlier than 2015-11-29 |  |  |
| 120 | 1.4.4.3 | Complete Test Plan Document ver3.0 | milestone | 0d | 2015-11-24 | 2015-11-24 | 24d | start no earlier than 2015-11-24 |  |  |
| 121 | 1.4.5 | Submit source code final to supervisor | milestone | 0d | 2015-11-29 | 2015-11-29 | 20d | start no earlier than 2015-11-29 | HoangLVQ |  |
| 122 | 1.4.6 | **Evaluation** |  | 1d | 2015-12-01 | 2015-12-01 | 17d |  |  | 16h |
| 123 | 1.4.6.1 | Evaluate Current System |  | 1d | 2015-12-01 | 2015-12-01 | 17d | start no earlier than 2015-12-01 | TEAM | 8h |
| 124 | 1.4.6.2 | Set goals for next incement |  | 1d | 2015-12-01 | 2015-12-01 | 17d | start no earlier than 2015-12-01 | HoangLVQ | 8h |

| ID | WBS | Task | Type | Duration | Start | Finish | Predecessors | Total slack | Free slack | Constraint | Resources | Work |
| --- | --- | --- | --- | --- | --- | --- | --- | --- | --- | --- | --- | --- |
| 125 | 1.5 | **Increment 4** |  | 16d | 2015-12-01 | 2015-12-17 |  | 2d |  |  |  | 232h |
| 126 | 1.5.1 | **Planning** |  | 1d | 2015-12-01 | 2015-12-01 |  | 17d |  |  |  | 8h |
| 127 | 1.5.1.1 | Review and update Project Manage Plan |  | 1d | 2015-12-01 | 2015-12-01 |  | 17d |  | start no earlier than 2015-12-01 | HoangLVQ | 8h |
| 128 | 1.5.1.2 | Complete Final PMP document | milestone | 0d | 2015-12-01 | 2015-12-01 |  | 18d |  | start no earlier than 2015-12-01 |  |  |
| 129 | 1.5.2 | **Implementation** |  | 2d | 2015-12-01 | 2015-12-02 |  | 16d |  |  |  | 96h |
| 130 | 1.5.2.1 | **Complete all documents** |  | 2d | 2015-12-01 | 2015-12-02 |  | 16d |  |  |  | 96h |
| 131 | 1.5.2.1.1 | Refine entity system |  | 2d | 2015-12-01 | 2015-12-02 |  | 16d |  | start no earlier than 2015-12-01 | HoangLVQ; HoangNK; QuyenNV; HuyTDH | 64h |
| 132 | 1.5.2.1.2 | Create user manual |  | 2d | 2015-12-01 | 2015-12-02 |  | 16d |  | start no earlier than 2015-12-01 | KhanhKC; NhungNTH | 32h |
| 133 | 1.5.2.1.3 | Complete User Manual | milestone | 0d | 2015-12-02 | 2015-12-02 |  | 17d |  | start no earlier than 2015-12-02 |  |  |
| 134 | 1.5.3 | **Testing** |  | 2d | 2015-12-03 | 2015-12-04 |  | 14d |  |  |  | 32h |
| 135 | 1.5.3.1 | Create and execute system test System |  | 2d | 2015-12-03 | 2015-12-04 |  | 14d |  | start no earlier than 2015-12-03 | NhungNTH; KhanhKC | 32h |
| 136 | 1.5.3.2 | Complete final report of testing | milestone | 0d | 2015-12-04 | 2015-12-04 |  | 15d |  | start no earlier than 2015-12-04 | NhungNTH; KhanhKC |  |
| 137 | 1.5.4 | **Create final report** |  | 1d | 2015-12-05 | 2015-12-06 |  | 13d |  |  |  | 16h |
| 138 | 1.5.4.1 | Create final report |  | 1d | 2015-12-05 | 2015-12-05 |  | 13d | 0d | start no earlier than 2015-12-05 | HoangLVQ; KhanhKC | 16h |
| 139 | 1.5.4.2 | Complete Final Report | milestone | 0d | 2015-12-05 | 2015-12-05 |  | 14d |  | start no earlier than 2015-12-05 |  |  |
| 140 | 1.5.4.3 | Get supervisor's approve on final report | milestone | 0d | 2015-12-05 | 2015-12-05 | 138 | 13d |  |  | HoangLVQ |  |
| 141 | 1.5.4.4 | Submit final report to FPT University | milestone | 0d | 2015-12-06 | 2015-12-06 |  | 13d |  | start no earlier than 2015-12-06 | HoangLVQ |  |
| 142 | 1.5.5 | Training Presentation |  | 10d | 2015-12-07 | 2015-12-17 |  | 2d |  | start no earlier than 2015-12-07 | TEAM | 80h |
| 143 | 1.6 | **Closing** |  | 1d | 2015-12-21 | 2015-12-21 |  | 0d |  |  |  | 8h |
| 144 | 1.6.1 | Presentation |  | 1d | 2015-12-21 | 2015-12-21 |  | 0d |  | start no earlier than 2015-12-21 | TEAM | 8h |
