# Karrywell-13122015

Schedule from MS Project, 2015-09-07 to 2015-12-23, A marks actual dates.
Grizli777

## Calendars

- Standard: Mon-Fri 08:00-12:00, 13:00-17:00; Sat-Sun off. Exceptions (off unless hours are given): 2015-09-13 08:00-12:00, 13:00-17:00, 2015-09-20 08:00-12:00, 13:00-17:00, 2015-10-04 08:00-12:00, 13:00-17:00, 2015-11-08 08:00-12:00, 13:00-17:00, 2015-11-22 08:00-12:00, 13:00-17:00, 2015-12-13 08:00-12:00, 13:00-17:00.

## Resources

| Resource |
| --- |
| HoangLVQ |
| KhanhKC |
| HuyTDH |
| HoangNK |
| NhungNTH |
| QuyenNV |

## Schedule

| ID | WBS | Task | Type | Duration | Start | Finish | Predecessors | Complete | Constraint | Resources | Work | Actual work |
| --- | --- | --- | --- | --- | --- | --- | --- | --- | --- | --- | --- | --- |
| 1 | 1 | **Karrywell** |  | 84d | 2015-09-07 A | 2015-12-23 A |  | 100% |  |  | 3262h | 3262h |
| 2 | 1.1 | **Initiation** |  | 22d | 2015-09-07 A | 2015-10-04 A |  | 100% |  |  | 974h | 974h |
| 3 | 1.1.1 | **Define Team** |  | 0.5d | 2015-09-07 A | 2015-09-07 A |  | 100% |  |  | 48h | 48h |
| 4 | 1.1.1.1 | Form up team roles |  | 0.5d | 2015-09-07 A | 2015-09-07 A |  | 100% | start no earlier than 2015-09-07 | HoangLVQ; HoangNK; HuyTDH; KhanhKC; NhungNTH; QuyenNV | 24h | 24h |
| 5 | 1.1.1.2 | Uniform idea meeting |  | 0.5d | 2015-09-07 A | 2015-09-07 A |  | 100% | start no earlier than 2015-09-07 | HoangLVQ; HoangNK; HuyTDH; KhanhKC; NhungNTH; QuyenNV | 24h | 24h |
| 6 | 1.1.2 | Project Clarification |  | 0.5d | 2015-09-08 A | 2015-09-08 A | 3 | 100% | start no earlier than 2015-09-08 | HoangLVQ; HoangNK; HuyTDH; KhanhKC; NhungNTH; QuyenNV | 24h | 24h |
| 7 | 1.1.3 | Survey practise |  | 2d | 2015-09-08 A | 2015-09-09 A | 3 | 100% | finish no earlier than 2015-09-09 | HoangLVQ; HoangNK; HuyTDH; KhanhKC; NhungNTH; QuyenNV | 48h | 48h |
| 8 | 1.1.4 | Meeting with supervisor |  | 0.5d | 2015-09-09 A | 2015-09-09 A |  | 100% | start no earlier than 2015-09-09 | HoangLVQ; HoangNK; HuyTDH; KhanhKC; NhungNTH; QuyenNV | 24h | 24h |
| 9 | 1.1.5 | Approve project's idea | milestone | 0d | 2015-09-09 A | 2015-09-09 A |  | 100% | start no earlier than 2015-09-09 |  |  |  |
| 10 | 1.1.6 | **Project Introduction** |  | 1.5d | 2015-09-10 A | 2015-09-11 A |  | 100% |  |  | 80h | 80h |
| 11 | 1.1.6.1 | Survery practise |  | 1d | 2015-09-10 A | 2015-09-10 A |  | 100% | start no earlier than 2015-09-10 | HoangLVQ; HoangNK; HuyTDH; KhanhKC; NhungNTH; QuyenNV | 48h | 48h |
| 12 | 1.1.6.2 | Research Background |  | 0.5d | 2015-09-11 A | 2015-09-11 A | 11 | 100% |  | HoangNK; KhanhKC; QuyenNV | 12h | 12h |
| 13 | 1.1.6.3 | Research Competitor |  | 0.5d | 2015-09-11 A | 2015-09-11 A |  | 100% | start no earlier than 2015-09-11 | HuyTDH; NhungNTH | 8h | 8h |
| 14 | 1.1.6.4 | Research Proposal |  | 0.5d | 2015-09-11 A | 2015-09-11 A |  | 100% | start no earlier than 2015-09-11 | HoangLVQ | 4h | 4h |
| 15 | 1.1.6.5 | Create project introduction document |  | 0.5d | 2015-09-11 A | 2015-09-11 A |  | 100% | start no earlier than 2015-09-11 | HoangLVQ; KhanhKC | 8h | 8h |
| 16 | 1.1.6.6 | Complete introduction document | milestone | 0d | 2015-09-11 A | 2015-09-11 A |  | 100% | start no earlier than 2015-09-11 |  |  |  |
| 17 | 1.1.7 | Submit Report 1 to Supervisor | milestone | 0d | 2015-09-13 A | 2015-09-13 A |  | 100% | start no earlier than 2015-09-13 | HoangLVQ |  |  |
| 18 | 1.1.8 | **Planning** |  | 5d | 2015-09-14 A | 2015-09-20 A |  | 100% |  |  | 20h | 20h |
| 19 | 1.1.8.1 | Research and make choice process model |  | 2d | 2015-09-14 A | 2015-09-15 A |  | 100% | start no earlier than 2015-09-14 | HoangLVQ | 4h | 4h |
| 20 | 1.1.8.2 | Create work schedule |  | 1d | 2015-09-16 A | 2015-09-16 A | 19 | 100% |  | HoangLVQ | 6h | 6h |
| 21 | 1.1.8.3 | Create project manage Plan document |  | 2d | 2015-09-17 A | 2015-09-18 A | 20 | 100% |  | HoangLVQ | 10h | 10h |
| 22 | 1.1.8.4 | Complete PMP document v1.0 | milestone | 0d | 2015-09-18 A | 2015-09-18 A |  | 100% | start no earlier than 2015-09-18 |  |  |  |
| 23 | 1.1.8.5 | Submit Report 2 to supervisor | milestone | 0d | 2015-09-20 A | 2015-09-20 A |  | 100% | start no earlier than 2015-09-20 | HoangLVQ |  |  |
| 24 | 1.1.9 | **Requirement** |  | 16d | 2015-09-14 A | 2015-10-04 A |  | 100% |  |  | 538h | 538h |
| 25 | 1.1.9.1 | Define functions of system |  | 1d | 2015-09-14 A | 2015-09-14 A |  | 100% | start no earlier than 2015-09-14 | HoangLVQ; HoangNK; HuyTDH; KhanhKC; NhungNTH; QuyenNV | 46h | 46h |

| ID | WBS | Task | Type | Duration | Start | Finish | Predecessors | Complete | Constraint | Resources | Work | Actual work |
| --- | --- | --- | --- | --- | --- | --- | --- | --- | --- | --- | --- | --- |
| 26 | 1.1.9.2 | **Create user cases** |  | 10d | 2015-09-15 A | 2015-09-25 A |  | 100% |  |  | 384h | 384h |
| 27 | 1.1.9.2.1 | **Mobile** |  | 8d | 2015-09-15 A | 2015-09-23 A |  | 100% |  |  | 120h | 120h |
| 28 | 1.1.9.2.1.1 | User Cases: Shipper |  | 8d | 2015-09-15 A | 2015-09-23 A |  | 100% | start no earlier than 2015-09-15 | HuyTDH; QuyenNV | 52h | 52h |
| 29 | 1.1.9.2.1.2 | Draw sequence diagrams |  | 8d | 2015-09-15 A | 2015-09-23 A |  | 100% | start no earlier than 2015-09-15 | HuyTDH; QuyenNV | 38h | 38h |
| 30 | 1.1.9.2.1.3 | Design Mockup Screens |  | 8d | 2015-09-15 A | 2015-09-23 A |  | 100% | start no earlier than 2015-09-15 | HuyTDH; QuyenNV | 30h | 30h |
| 31 | 1.1.9.2.2 | **Store** |  | 10d | 2015-09-15 A | 2015-09-25 A |  | 100% |  |  | 115h | 115h |
| 32 | 1.1.9.2.2.1 | User Cases: Store |  | 10d | 2015-09-15 A | 2015-09-25 A |  | 100% | start no earlier than 2015-09-15 | HoangLVQ; KhanhKC | 49h | 49h |
| 33 | 1.1.9.2.2.2 | Draw sequence diagrams |  | 10d | 2015-09-15 A | 2015-09-25 A |  | 100% | start no earlier than 2015-09-15 | HoangLVQ; KhanhKC | 33h | 33h |
| 34 | 1.1.9.2.2.3 | Design Mockup Screens |  | 10d | 2015-09-15 A | 2015-09-25 A |  | 100% | start no earlier than 2015-09-15 | HoangLVQ; KhanhKC | 33h | 33h |
| 35 | 1.1.9.2.3 | **Admin** |  | 10d | 2015-09-15 A | 2015-09-25 A |  | 100% |  |  | 149h | 149h |
| 36 | 1.1.9.2.3.1 | User Cases: Admin |  | 9d | 2015-09-15 A | 2015-09-25 A |  | 100% | start no earlier than 2015-09-15 | HoangLVQ; HoangNK | 49h | 49h |
| 37 | 1.1.9.2.3.2 | Draw sequence diagrams |  | 9d | 2015-09-15 A | 2015-09-25 A |  | 100% | finish no earlier than 2015-09-23 | NhungNTH; HoangNK | 50h | 50h |
| 38 | 1.1.9.2.3.3 | Design Mockup screens |  | 9d | 2015-09-15 A | 2015-09-25 A |  | 100% | finish no earlier than 2015-09-23 | NhungNTH; HoangNK | 50h | 50h |
| 39 | 1.1.9.3 | Define non-functional requirements |  | 2d | 2015-09-24 A | 2015-09-25 A |  | 100% | start no earlier than 2015-09-24 | KhanhKC | 16h | 16h |
| 40 | 1.1.9.4 | Draw entity relationship diagram |  | 2d | 2015-09-24 A | 2015-09-25 A |  | 100% | start no earlier than 2015-09-24 | HuyTDH | 16h | 16h |
| 41 | 1.1.9.5 | Draw state machine diagram |  | 2d | 2015-09-24 A | 2015-09-25 A |  | 100% | start no earlier than 2015-09-24 | QuyenNV | 16h | 16h |
| 42 | 1.1.9.6 | Draw activity diagram |  | 2d | 2015-09-24 A | 2015-09-25 A |  | 100% | finish no earlier than 2015-09-25 | HoangNK | 12h | 12h |
| 43 | 1.1.9.7 | Review and update SRS document |  | 1d | 2015-09-28 A | 2015-09-28 A | 42 | 100% |  | HoangLVQ; HoangNK; HuyTDH; KhanhKC; NhungNTH; QuyenNV | 48h | 48h |
| 44 | 1.1.9.8 | Complete SRS document | milestone | 0d | 2015-09-28 A | 2015-09-28 A | 41 | 100% | start no earlier than 2015-09-28 |  |  |  |
| 45 | 1.1.9.9 | Submit Report 3 to Supervisor | milestone | 0d | 2015-10-04 A | 2015-10-04 A |  | 100% | start no earlier than 2015-10-04 | HoangLVQ |  |  |
| 46 | 1.1.10 | **Research & Trainning Technology** |  | 4d | 2015-09-29 A | 2015-10-02 A |  | 100% |  |  | 192h | 192h |
| 47 | 1.1.10.1 | Research AngularJS |  | 1d | 2015-09-29 A | 2015-09-29 A |  | 100% | start no earlier than 2015-09-29 | HoangLVQ; HoangNK; HuyTDH; KhanhKC; QuyenNV | 40h | 40h |
| 48 | 1.1.10.2 | Research NodeJS |  | 1d | 2015-09-30 A | 2015-09-30 A | 47 | 100% |  | HoangLVQ; HoangNK; HuyTDH; KhanhKC; QuyenNV | 40h | 40h |
| 49 | 1.1.10.3 | Research IONIC |  | 1d | 2015-10-01 A | 2015-10-01 A | 48 | 100% |  | HoangLVQ; HoangNK; HuyTDH; KhanhKC; QuyenNV | 40h | 40h |
| 50 | 1.1.10.4 | Research MOCHA tool | manual | 3d | 2015-09-29 A | 2015-10-01 A |  | 100% |  | NhungNTH | 24h | 24h |
| 51 | 1.1.10.5 | Training |  | 1d | 2015-10-02 A | 2015-10-02 A | 49 | 100% |  | HoangLVQ; HoangNK; HuyTDH; KhanhKC; NhungNTH; QuyenNV | 48h | 48h |

| ID | WBS | Task | Type | Duration | Start | Finish | Predecessors | Complete | Constraint | Resources | Work | Actual work |
| --- | --- | --- | --- | --- | --- | --- | --- | --- | --- | --- | --- | --- |
| 52 | 1.2 | **Increment I** |  | 26.5d | 2015-10-05 A | 2015-11-09 A |  | 100% |  |  | 1068h | 1068h |
| 53 | 1.2.1 | **Project Plan** |  | 0.5d | 2015-10-05 A | 2015-10-05 A |  | 100% |  |  | 4h | 4h |
| 54 | 1.2.1.1 | Review and update Project Manage Plan |  | 0.5d | 2015-10-05 A | 2015-10-05 A |  | 100% | start no earlier than 2015-10-05 | HoangLVQ | 4h | 4h |
| 55 | 1.2.2 | **System Architecture Design** |  | 13d | 2015-10-06 A | 2015-10-22 A |  | 100% |  |  | 472h | 472h |
| 56 | 1.2.2.1 | Unify system features |  | 0.5d | 2015-10-06 A | 2015-10-06 A |  | 100% | start no earlier than 2015-10-06 | HoangLVQ; HoangNK; HuyTDH; KhanhKC; NhungNTH; QuyenNV | 24h | 24h |
| 57 | 1.2.2.2 | Define the system architecture |  | 0.5d | 2015-10-06 A | 2015-10-06 A |  | 100% | start no earlier than 2015-10-06 | HoangLVQ | 4h | 4h |
| 58 | 1.2.2.3 | **Create SAD Document** |  | 12d | 2015-10-07 A | 2015-10-22 A |  | 100% |  |  | 444h | 444h |
| 59 | 1.2.2.3.1 | Draw implementation view |  | 0.5d | 2015-10-07 A | 2015-10-07 A |  | 100% | start no earlier than 2015-10-07 | HoangLVQ | 1h | 1h |
| 60 | 1.2.2.3.2 | Draw deployment view |  | 0.5d | 2015-10-07 A | 2015-10-07 A |  | 100% | start no earlier than 2015-10-07 | HoangLVQ | 1h | 1h |
| 61 | 1.2.2.3.3 | **Draw Sequence Diagram** |  | 7d | 2015-10-07 A | 2015-10-15 A |  | 100% |  |  | 275h | 275h |
| 62 | 1.2.2.3.3.1 | Common | manual | 4d | 2015-10-07 A | 2015-10-12 A |  | 100% |  | HoangLVQ | 14h | 14h |
| 63 | 1.2.2.3.3.2 | Admin |  | 7d | 2015-10-07 A | 2015-10-15 A |  | 100% | start no earlier than 2015-10-07 | HoangLVQ; HoangNK | 78h | 78h |
| 64 | 1.2.2.3.3.3 | Store |  | 7d | 2015-10-07 A | 2015-10-15 A |  | 100% | start no earlier than 2015-10-07 | HoangLVQ; KhanhKC | 78h | 78h |
| 65 | 1.2.2.3.3.4 | Shipper |  | 7d | 2015-10-07 A | 2015-10-15 A |  | 100% | start no earlier than 2015-10-07 | HuyTDH; QuyenNV | 105h | 105h |
| 66 | 1.2.2.3.4 | Draw class diagram |  | 1d | 2015-10-07 A | 2015-10-07 A |  | 100% | start no earlier than 2015-10-07 | HuyTDH | 7h | 7h |
| 67 | 1.2.2.3.5 | Describe detail design |  | 4d | 2015-10-16 A | 2015-10-21 A | 61 | 100% |  | HoangLVQ; HoangNK; HuyTDH; KhanhKC; NhungNTH; QuyenNV | 152h | 152h |
| 68 | 1.2.2.3.6 | Describe database |  | 1d | 2015-10-22 A | 2015-10-22 A | 67 | 100% |  | HoangNK; HuyTDH | 8h | 8h |
| 69 | 1.2.2.3.7 | Complete SAD document ver1.0 | milestone | 0d | 2015-10-21 A | 2015-10-21 A |  | 100% | finish no earlier than 2015-10-21 |  |  |  |
| 70 | 1.2.3 | **Implementation** |  | 13d | 2015-10-21 A | 2015-11-06 A |  | 100% |  |  | 454h | 454h |
| 71 | 1.2.3.1 | Build develop enviroment |  | 3d | 2015-10-21 A | 2015-10-23 A |  | 100% | start no earlier than 2015-10-21 | HoangLVQ; HoangNK; HuyTDH; KhanhKC; NhungNTH; QuyenNV | 62h | 62h |
| 72 | 1.2.3.2 | **Design UI and Coding** |  | 11d | 2015-10-23 A | 2015-11-06 A |  | 100% |  |  | 392h | 392h |
| 73 | 1.2.3.2.1 | **Common** |  | 11d | 2015-10-23 A | 2015-11-06 A |  | 100% |  |  | 88h | 88h |
| 74 | 1.2.3.2.1.1 | Coding Skeleton System |  | 1d | 2015-10-23 A | 2015-10-23 A |  | 100% | start no earlier than 2015-10-23 | HoangLVQ | 8h | 8h |
| 75 | 1.2.3.2.1.2 | Coding authen & authorization module |  | 1d | 2015-10-26 A | 2015-10-26 A | 74 | 100% |  | HoangLVQ | 8h | 8h |
| 76 | 1.2.3.2.1.3 | Coding map module |  | 5d | 2015-10-27 A | 2015-11-02 A | 75 | 100% |  | HoangLVQ | 40h | 40h |
| 77 | 1.2.3.2.1.4 | Coding socket module |  | 4d | 2015-11-03 A | 2015-11-06 A | 76 | 100% |  | HoangLVQ | 32h | 32h |

| ID | WBS | Task | Type | Duration | Start | Finish | Predecessors | Complete | Constraint | Resources | Work | Actual work |
| --- | --- | --- | --- | --- | --- | --- | --- | --- | --- | --- | --- | --- |
| 78 | 1.2.3.2.2 | **Shipper** |  | 10d | 2015-10-26 A | 2015-11-06 A |  | 100% |  |  | 152h | 152h |
| 79 | 1.2.3.2.2.1 | Login & logout |  | 3d | 2015-10-26 A | 2015-10-28 A |  | 100% | start no earlier than 2015-10-26 | QuyenNV | 24h | 24h |
| 80 | 1.2.3.2.2.2 | View profile |  | 3d | 2015-10-29 A | 2015-11-02 A | 79 | 100% |  | QuyenNV | 24h | 24h |
| 81 | 1.2.3.2.2.3 | View task list |  | 4d | 2015-11-03 A | 2015-11-06 A | 80 | 100% |  | QuyenNV | 32h | 32h |
| 82 | 1.2.3.2.2.4 | View order detail |  | 9d | 2015-10-27 A | 2015-11-06 A |  | 100% | start no earlier than 2015-10-27 | HuyTDH | 72h | 72h |
| 83 | 1.2.3.2.3 | **Admin** |  | 9d | 2015-10-27 A | 2015-11-06 A |  | 100% |  |  | 72h | 72h |
| 84 | 1.2.3.2.3.1 | View Store List |  | 5d | 2015-10-27 A | 2015-11-02 A |  | 100% | start no earlier than 2015-10-27 | HoangNK | 40h | 40h |
| 85 | 1.2.3.2.3.2 | View Store Profile |  | 4d | 2015-11-03 A | 2015-11-06 A | 84 | 100% |  | HoangNK | 32h | 32h |
| 86 | 1.2.3.2.4 | **Store** |  | 10d | 2015-10-26 A | 2015-11-06 A |  | 100% |  |  | 80h | 80h |
| 87 | 1.2.3.2.4.1 | Dashboard Store |  | 6d | 2015-10-26 A | 2015-11-02 A |  | 100% | start no earlier than 2015-10-26 | KhanhKC | 48h | 48h |
| 88 | 1.2.3.2.4.2 | View Order List |  | 4d | 2015-11-03 A | 2015-11-06 A | 87 | 100% |  | KhanhKC | 32h | 32h |
| 89 | 1.2.3.3 | Complete source code ver1.0 | milestone | 0d | 2015-11-06 A | 2015-11-06 A |  | 100% | start no earlier than 2015-11-06 |  |  |  |
| 90 | 1.2.4 | **Testing** |  | 13d | 2015-10-22 A | 2015-11-08 A |  | 100% |  |  | 102h | 102h |
| 91 | 1.2.4.1 | Create Test Plan |  | 3d | 2015-10-22 A | 2015-10-26 A |  | 100% | start no earlier than 2015-10-22 | NhungNTH | 20h | 20h |
| 92 | 1.2.4.2 | Complete Test Plan Document | milestone | 0d | 2015-10-26 A | 2015-10-26 A |  | 100% | start no earlier than 2015-10-26 |  |  |  |
| 93 | 1.2.4.3 | Create Test Case ( System Test, Integration Test) |  | 7d | 2015-10-26 A | 2015-11-03 A |  | 100% | start no earlier than 2015-10-26 | NhungNTH | 50h | 50h |
| 94 | 1.2.4.4 | Execute System Test |  | 4d | 2015-11-04 A | 2015-11-08 A | 93 | 100% | finish no earlier than 2015-11-08 | NhungNTH | 32h | 32h |
| 95 | 1.2.4.5 | Complete Test Report v1.0 | milestone | 0d | 2015-11-08 A | 2015-11-08 A |  | 100% | start no earlier than 2015-11-08 | NhungNTH |  |  |
| 96 | 1.2.5 | Submit Report 4 to Supervisor | milestone | 0d | 2015-11-08 A | 2015-11-08 A |  | 100% | start no earlier than 2015-11-08 | HoangLVQ |  |  |
| 97 | 1.2.6 | **Evaluation** |  | 0.5d | 2015-11-09 A | 2015-11-09 A |  | 100% |  |  | 36h | 36h |
| 98 | 1.2.6.1 | Evaluate current system |  | 0.5d | 2015-11-09 A | 2015-11-09 A |  | 100% | start no earlier than 2015-11-09 | HoangLVQ; HoangNK; HuyTDH; KhanhKC; NhungNTH; QuyenNV | 18h | 18h |
| 99 | 1.2.6.2 | Set goals for next increment |  | 0.5d | 2015-11-09 A | 2015-11-09 A |  | 100% | start no earlier than 2015-11-09 | HoangLVQ; HoangNK; HuyTDH; KhanhKC; NhungNTH; QuyenNV | 18h | 18h |
| 100 | 1.3 | **Increment II** |  | 18.5d | 2015-11-09 A | 2015-12-02 A |  | 100% |  |  | 790h | 790h |
| 101 | 1.3.1 | **Project Plan** |  | 1d | 2015-11-09 A | 2015-11-09 A |  | 100% |  | HoangLVQ | 6h | 6h |
| 102 | 1.3.1.1 | Review and update Project Manage Plan |  | 1d | 2015-11-09 A | 2015-11-09 A |  | 100% | start no earlier than 2015-11-09 | HoangLVQ | 2h | 2h |
| 103 | 1.3.1.2 | Complete PMP document ver2.0 | milestone | 0d | 2015-11-09 A | 2015-11-09 A |  | 100% | start no earlier than 2015-11-09 | HoangLVQ |  |  |

| ID | WBS | Task | Type | Duration | Start | Finish | Predecessors | Complete | Constraint | Resources | Work | Actual work |
| --- | --- | --- | --- | --- | --- | --- | --- | --- | --- | --- | --- | --- |
| 104 | 1.3.2 | **System Architecture Design** |  | 1d | 2015-11-10 A | 2015-11-10 A |  | 100% |  |  | 24h | 24h |
| 105 | 1.3.2.1 | update component diagram |  | 1d | 2015-11-10 A | 2015-11-10 A |  | 100% | start no earlier than 2015-11-10 | HoangLVQ | 2h | 2h |
| 106 | 1.3.2.2 | **update sequence diagram** |  | 1d | 2015-11-10 A | 2015-11-10 A |  | 100% |  |  | 6h | 6h |
| 107 | 1.3.2.2.1 | Admin: resolve Issue |  | 1d | 2015-11-10 A | 2015-11-10 A |  | 100% | start no earlier than 2015-11-10 | HoangNK | 2h | 2h |
| 108 | 1.3.2.2.2 | Shipper: Send Issue |  | 1d | 2015-11-10 A | 2015-11-10 A |  | 100% | start no earlier than 2015-11-10 | QuyenNV | 2h | 2h |
| 109 | 1.3.2.2.3 | Store: find shipper |  | 1d | 2015-11-10 A | 2015-11-10 A |  | 100% | start no earlier than 2015-11-10 | HoangLVQ | 2h | 2h |
| 110 | 1.3.2.3 | update database |  | 1d | 2015-11-10 A | 2015-11-10 A |  | 100% | start no earlier than 2015-11-10 | HuyTDH | 4h | 4h |
| 111 | 1.3.2.4 | **update detail design** |  | 1d | 2015-11-10 A | 2015-11-10 A |  | 100% |  |  | 12h | 12h |
| 112 | 1.3.2.4.1 | Admin: store list |  | 1d | 2015-11-10 A | 2015-11-10 A |  | 100% | start no earlier than 2015-11-10 | HoangNK | 8h | 8h |
| 113 | 1.3.2.4.2 | Shipper: view task list screen |  | 1d | 2015-11-10 A | 2015-11-10 A |  | 100% | start no earlier than 2015-11-10 | QuyenNV | 2h | 2h |
| 114 | 1.3.2.4.3 | Store: Dashboard |  | 1d | 2015-11-10 A | 2015-11-10 A |  | 100% | start no earlier than 2015-11-10 | KhanhKC | 2h | 2h |
| 115 | 1.3.2.5 | Complete SAD document ver2.0 | milestone | 0d | 2015-11-10 A | 2015-11-10 A |  | 100% | start no earlier than 2015-11-10 |  |  |  |
| 116 | 1.3.3 | **Implementation** |  | 15d | 2015-11-10 A | 2015-11-27 A |  | 100% |  |  | 448h | 448h |
| 117 | 1.3.3.1 | **Design UI and Coding** |  | 15d | 2015-11-10 A | 2015-11-27 A |  | 100% |  |  | 448h | 448h |
| 118 | 1.3.3.1.1 | Update source code follow new update in SAD DOC |  | 2d | 2015-11-10 A | 2015-11-11 A |  | 100% | start no earlier than 2015-11-10 | HoangNK; HoangLVQ; HuyTDH; KhanhKC; QuyenNV | 64h | 64h |
| 119 | 1.3.3.1.2 | **Shipper** |  | 7d | 2015-11-12 A | 2015-11-20 A |  | 100% |  |  | 108h | 108h |
| 120 | 1.3.3.1.2.1 | Send issue |  | 7d | 2015-11-12 A | 2015-11-20 A |  | 100% | start no earlier than 2015-11-12 | QuyenNV | 55h | 55h |
| 121 | 1.3.3.1.2.2 | Chang working status |  | 1d | 2015-11-12 A | 2015-11-12 A |  | 100% | start no earlier than 2015-11-12 | HuyTDH | 4h | 4h |
| 122 | 1.3.3.1.2.3 | View history |  | 2d | 2015-11-12 A | 2015-11-13 A |  | 100% | start no earlier than 2015-11-12 | HuyTDH | 12h | 12h |
| 123 | 1.3.3.1.2.4 | Insert google map |  | 5d | 2015-11-16 A | 2015-11-20 A | 122 | 100% |  | HoangLVQ | 30h | 30h |
| 124 | 1.3.3.1.2.5 | Connect socket shipper to server |  | 1d | 2015-11-19 A | 2015-11-19 A |  | 100% | start no earlier than 2015-11-19 | HoangLVQ; QuyenNV | 7h | 7h |
| 125 | 1.3.3.1.3 | **Admin** |  | 13d | 2015-11-12 A | 2015-11-27 A |  | 100% |  |  | 148h | 148h |
| 126 | 1.3.3.1.3.1 | Dashboard Admin |  | 3d | 2015-11-12 A | 2015-11-16 A |  | 100% | start no earlier than 2015-11-12 | HoangLVQ; HoangNK | 42h | 42h |
| 127 | 1.3.3.1.3.2 | View Shipper List |  | 2d | 2015-11-17 A | 2015-11-18 A | 126 | 100% |  | HoangLVQ; HoangNK | 18h | 18h |
| 128 | 1.3.3.1.3.3 | View Order List |  | 1d | 2015-11-19 A | 2015-11-19 A | 127 | 100% |  | HoangNK | 8h | 8h |
| 129 | 1.3.3.1.3.4 | View Order Detail |  | 1d | 2015-11-20 A | 2015-11-20 A | 128 | 100% |  | HoangNK | 8h | 8h |
| 130 | 1.3.3.1.3.5 | View Shipper Profile |  | 1d | 2015-11-23 A | 2015-11-23 A |  | 100% | start no earlier than 2015-11-23 | HoangNK | 2h | 2h |
| 131 | 1.3.3.1.3.6 | View Transaction |  | 1d | 2015-11-23 A | 2015-11-23 A |  | 100% | start no earlier than 2015-11-23 | HoangNK | 2h | 2h |
| 132 | 1.3.3.1.3.7 | Update Profile Shipper |  | 1d | 2015-11-23 A | 2015-11-23 A |  | 100% | start no earlier than 2015-11-23 | HoangNK | 2h | 2h |
| 133 | 1.3.3.1.3.8 | Update Profile Store |  | 1d | 2015-11-23 A | 2015-11-23 A |  | 100% | start no earlier than 2015-11-23 | HoangNK | 2h | 2h |
| 134 | 1.3.3.1.3.9 | Resolve Issue |  | 2d | 2015-11-24 A | 2015-11-25 A | 133 | 100% |  | HoangNK | 16h | 16h |
| 135 | 1.3.3.1.3.10 | Report |  | 3d | 2015-11-16 A | 2015-11-18 A |  | 100% | start no earlier than 2015-11-16 | HuyTDH | 24h | 24h |
| 136 | 1.3.3.1.3.11 | Notification |  | 2d | 2015-11-23 A | 2015-11-24 A |  | 100% | start no earlier than 2015-11-23 | HoangLVQ | 8h | 8h |
| 137 | 1.3.3.1.3.12 | Assign Task |  | 2d | 2015-11-26 A | 2015-11-27 A | 134 | 100% |  | HoangNK | 16h | 16h |

| ID | WBS | Task | Type | Duration | Start | Finish | Predecessors | Complete | Constraint | Resources | Work | Actual work |
| --- | --- | --- | --- | --- | --- | --- | --- | --- | --- | --- | --- | --- |
| 138 | 1.3.3.1.4 | **Store** |  | 13d | 2015-11-12 A | 2015-11-27 A |  | 100% |  |  | 128h | 128h |
| 139 | 1.3.3.1.4.1 | Find Shipper |  | 3d | 2015-11-25 A | 2015-11-27 A |  | 100% | start no earlier than 2015-11-25 | HoangLVQ; KhanhKC | 48h | 48h |
| 140 | 1.3.3.1.4.2 | Create Order |  | 5d | 2015-11-12 A | 2015-11-18 A |  | 100% | start no earlier than 2015-11-12 | KhanhKC | 40h | 40h |
| 141 | 1.3.3.1.4.3 | View Transaction |  | 1d | 2015-11-19 A | 2015-11-19 A | 140 | 100% |  | KhanhKC | 8h | 8h |
| 142 | 1.3.3.1.4.4 | Edit Order |  | 1d | 2015-11-20 A | 2015-11-20 A | 141 | 100% | start no earlier than 2015-11-20 | KhanhKC | 8h | 8h |
| 143 | 1.3.3.1.4.5 | Notification |  | 2d | 2015-11-23 A | 2015-11-24 A |  | 100% | start no earlier than 2015-11-23 | HoangLVQ | 8h | 8h |
| 144 | 1.3.3.1.4.6 | View Order Detail |  | 2d | 2015-11-23 A | 2015-11-24 A |  | 100% | start no earlier than 2015-11-23 | KhanhKC | 16h | 16h |
| 145 | 1.3.3.2 | Complete source code ver2.0 | milestone | 0d | 2015-11-27 A | 2015-11-27 A |  | 100% | finish no earlier than 2015-11-27 |  |  |  |
| 146 | 1.3.4 | **Testing** |  | 18d | 2015-11-09 A | 2015-12-01 A |  | 100% |  |  | 294h | 294h |
| 147 | 1.3.4.1 | Update Test Plan Document |  | 1d | 2015-11-09 A | 2015-11-09 A |  | 100% | start no earlier than 2015-11-09 | NhungNTH | 4h | 4h |
| 148 | 1.3.4.2 | Comlete test plan document ver2.0 | milestone | 0d | 2015-11-09 A | 2015-11-09 A |  | 100% | start no earlier than 2015-11-09 |  |  |  |
| 149 | 1.3.4.3 | Update test case ( System Test, Integration Test) |  | 5d | 2015-11-09 A | 2015-11-13 A |  | 100% | start no earlier than 2015-11-09 | NhungNTH | 34h | 34h |
| 150 | 1.3.4.4 | Execute Test ( System Test, Integration Test ) |  | 12d | 2015-11-16 A | 2015-11-30 A | 149 | 100% |  | NhungNTH | 96h | 96h |
| 151 | 1.3.4.5 | **Create test case ( Unit Test )** |  | 7d | 2015-11-23 A | 2015-12-01 A |  | 100% |  |  | 160h | 160h |
| 152 | 1.3.4.5.1 | Admin |  | 2d | 2015-11-30 A | 2015-12-01 A |  | 100% | start no earlier than 2015-11-30 | HoangNK | 16h | 16h |
| 153 | 1.3.4.5.2 | Store |  | 2d | 2015-11-30 A | 2015-12-01 A |  | 100% | start no earlier than 2015-11-30 | KhanhKC | 16h | 16h |
| 154 | 1.3.4.5.3 | Shipper |  | 7d | 2015-11-23 A | 2015-12-01 A |  | 100% | finish no earlier than 2015-12-01 | HuyTDH; QuyenNV | 112h | 112h |
| 155 | 1.3.4.5.4 | Socket |  | 2d | 2015-11-30 A | 2015-12-01 A |  | 100% | start no earlier than 2015-11-30 | HoangLVQ | 16h | 16h |
| 156 | 1.3.4.6 | Complete Test report v2.0 | milestone | 0d | 2015-11-30 A | 2015-11-30 A |  | 100% |  | NhungNTH |  |  |
| 157 | 1.3.5 | **Evaluation** |  | 0.5d | 2015-12-02 A | 2015-12-02 A |  | 100% |  |  | 18h | 18h |
| 158 | 1.3.5.1 | Evaluate current system |  | 0.5d | 2015-12-02 A | 2015-12-02 A |  | 100% | start no earlier than 2015-12-02 | HoangLVQ; HoangNK; HuyTDH; KhanhKC; NhungNTH; QuyenNV | 9h | 9h |
| 159 | 1.3.5.2 | Set goals for next increment |  | 0.5d | 2015-12-02 A | 2015-12-02 A |  | 100% | start no earlier than 2015-12-02 | HoangLVQ; HoangNK; HuyTDH; KhanhKC; NhungNTH; QuyenNV | 9h | 9h |
| 160 | 1.3.6 | Submit Report 5 to Supervisor | milestone | 0d | 2015-11-22 A | 2015-11-22 A |  | 100% | start no earlier than 2015-11-22 | HoangLVQ |  |  |
| 161 | 1.4 | **Increment III** |  | 11d | 2015-12-02 A | 2015-12-16 A |  | 100% |  |  | 382h | 382h |
| 162 | 1.4.1 | **Project Plan** |  | 1d | 2015-12-02 A | 2015-12-02 A |  | 100% |  |  | 1h | 1h |
| 163 | 1.4.1.1 | Review and update Project Manage Plan |  | 1d | 2015-12-02 A | 2015-12-02 A |  | 100% | start no earlier than 2015-12-02 | HoangLVQ | 1h | 1h |
| 164 | 1.4.1.2 | Complete PMP document ver3.0 | milestone | 0d | 2015-12-02 A | 2015-12-02 A |  | 100% | start no earlier than 2015-12-02 |  |  |  |
| 165 | 1.4.2 | Fix bug detecting in test case ( unit test and system test ) |  | 5d | 2015-12-02 A | 2015-12-08 A |  | 100% | start no earlier than 2015-12-02 | HoangLVQ; HoangNK; HuyTDH; KhanhKC; QuyenNV | 191h | 191h |
| 166 | 1.4.3 | Execute test ( System Test, Integration Test ) |  | 4d | 2015-12-09 A | 2015-12-13 A |  | 100% | start no earlier than 2015-12-09 | NhungNTH | 26h | 26h |
| 167 | 1.4.4 | Complete final test report | milestone | 0d | 2015-12-13 A | 2015-12-13 A |  | 100% | finish no earlier than 2015-12-13 | NhungNTH |  |  |
| 168 | 1.4.5 | Complete final source code | milestone | 0d | 2015-12-13 A | 2015-12-13 A |  | 100% | start no earlier than 2015-12-13 |  |  |  |
| 169 | 1.4.6 | Create install and user manual |  | 2d | 2015-12-09 A | 2015-12-10 A | 165 | 100% |  | HoangLVQ; HoangNK; HuyTDH; KhanhKC; QuyenNV | 80h | 80h |
| 170 | 1.4.7 | Complete install and user manual document | milestone | 0d | 2015-12-09 A | 2015-12-09 A |  | 100% | start no earlier than 2015-12-09 |  |  |  |
| 171 | 1.4.8 | Review all documents |  | 1d | 2015-12-11 A | 2015-12-11 A | 169 | 100% |  | HoangLVQ; HoangNK; HuyTDH; KhanhKC; NhungNTH; QuyenNV | 36h | 36h |
| 172 | 1.4.9 | Create final report |  | 1d | 2015-12-11 A | 2015-12-11 A |  | 100% | start no earlier than 2015-12-11 | HoangLVQ; HoangNK; HuyTDH; KhanhKC; NhungNTH; QuyenNV | 12h | 12h |
| 173 | 1.4.10 | Complete final report | milestone | 0d | 2015-12-11 A | 2015-12-11 A |  | 100% | start no earlier than 2015-12-11 |  |  |  |
| 174 | 1.4.11 | Submit Report 6 to Supervisor | milestone | 0d | 2015-12-13 A | 2015-12-13 A |  | 100% | start no earlier than 2015-12-13 | HoangLVQ |  |  |
| 175 | 1.4.12 | Create slide for presentation |  | 1d | 2015-12-15 A | 2015-12-15 A |  | 100% | finish no earlier than 2015-12-15 | HoangLVQ; KhanhKC; HoangNK; HuyTDH; NhungNTH; QuyenNV | 12h | 12h |
| 176 | 1.4.13 | Complete slide | milestone | 0d | 2015-12-15 A | 2015-12-15 A |  | 100% | start no earlier than 2015-12-15 |  |  |  |
| 177 | 1.4.14 | Export Document |  | 1d | 2015-12-15 A | 2015-12-15 A |  | 100% | start no earlier than 2015-12-15 | HoangLVQ; HoangNK; HuyTDH; KhanhKC; NhungNTH; QuyenNV | 24h | 24h |
| 178 | 1.4.15 | Submit Final Document to FPT univesity | milestone | 0d | 2015-12-16 A | 2015-12-16 A | 177 | 100% |  | HoangLVQ |  |  |

| ID | WBS | Task | Duration | Start | Finish | Complete | Constraint | Resources | Work | Actual work |
| --- | --- | --- | --- | --- | --- | --- | --- | --- | --- | --- |
| 179 | 1.5 | **Closing** | 1d | 2015-12-23 A | 2015-12-23 A | 100% |  |  | 48h | 48h |
| 180 | 1.5.1 | Presentation | 1d | 2015-12-23 A | 2015-12-23 A | 100% | start no earlier than 2015-12-23 | HoangLVQ; HoangNK; HuyTDH; KhanhKC; NhungNTH; QuyenNV | 48h | 48h |
