# VTT_Project_Plan

Schedule from MS Project, 2015-05-01 to 2015-08-27, A marks actual dates.

## Calendars

- Standard: Mon-Fri 08:00-12:00, 13:00-17:00; Sat-Sun off. Exceptions (off unless hours are given): 2015-03-02 to 2015-08-03 08:00-12:00, 13:00-17:00 (Capstone project, recurring), 2015-08-15 08:00-12:00, 13:00-17:00.

## Resources

| Resource |
| --- |
| DatQT |
| TuyenPT |
| LongNB |
| DuongTQ |
| ChinhNL |

## Schedule

| ID | WBS | Task | Type | Duration | Start | Finish | Predecessors | Complete | Remaining | Constraint | Resources | Work | Actual work |
| --- | --- | --- | --- | --- | --- | --- | --- | --- | --- | --- | --- | --- | --- |
| 1 | 1 | **Vietnamese Touch and Talk** |  | 100d | 2015-05-01 A | 2015-08-27 |  | 99% | 0.38d |  |  | 2080h | 2072h |
| 2 | 1.1 | **1. Strategy** |  | 4d | 2015-05-02 A | 2015-05-06 A |  | 100% |  |  |  | 48h | 48h |
| 3 | 1.1.1 | 1.1 Kick-off Meeting |  | 1d | 2015-05-02 A | 2015-05-02 A |  | 100% |  | finish no earlier than 2015-05-02 | DatQT | 8h | 8h |
| 4 | 1.1.2 | 1.2 Conducting competitive research |  | 2d | 2015-05-04 A | 2015-05-05 A | 3 | 100% |  |  | TuyenPT | 16h | 16h |
| 5 | 1.1.3 | 1.3 Conducting competitive Meeting |  | 1d | 2015-05-06 A | 2015-05-06 A | 4 | 100% |  |  | TuyenPT | 8h | 8h |
| 6 | 1.1.4 | 1.4 Creat project Charter |  | 1d | 2015-05-05 A | 2015-05-05 A | 3 | 100% |  |  | ChinhNL | 8h | 8h |
| 7 | 1.1.5 | 1.5 Review project Charter |  | 1d | 2015-05-06 A | 2015-05-06 A | 6 | 100% |  |  | DatQT | 8h | 8h |
| 8 | 1.2 | **2. Iterative I** |  | 58d | 2015-05-07 A | 2015-07-13 A | 2 | 100% |  |  |  | 1032h | 1032h |
| 9 | 1.2.1 | **2.1 Research** |  | 12d | 2015-05-07 A | 2015-05-20 A |  | 100% |  |  |  | 368h | 368h |
| 10 | 1.2.1.1 | 2.1.1 Creat Competitive Analysis Doc |  | 8d | 2015-05-07 A | 2015-05-15 A |  | 100% |  |  | ChinhNL | 64h | 64h |
| 11 | 1.2.1.2 | 2.1.2 Review Analysis Doc |  | 1d | 2015-05-18 A | 2015-05-18 A | 10 | 100% |  |  | DatQT | 8h | 8h |
| 12 | 1.2.1.3 | 2.1.3 Creat interviewer list |  | 4d | 2015-05-07 A | 2015-05-11 A |  | 100% |  |  | DatQT | 32h | 32h |
| 13 | 1.2.1.4 | 2.1.4 Creat first demo prototype |  | 5d | 2015-05-07 A | 2015-05-12 A |  | 100% |  |  | LongNB | 40h | 40h |
| 14 | 1.2.1.5 | 2.1.5 Review first prototype |  | 1d | 2015-05-13 A | 2015-05-13 A | 13 | 100% |  |  | DatQT | 8h | 8h |
| 15 | 1.2.1.6 | 2.1.6 Create second demo prototype |  | 2d | 2015-05-14 A | 2015-05-15 A | 14 | 100% |  |  | LongNB | 16h | 16h |
| 16 | 1.2.1.7 | 2.1.7 Review second prototype |  | 1d | 2015-05-16 A | 2015-05-16 A | 15 | 100% |  |  | DatQT | 8h | 8h |
| 17 | 1.2.1.8 | 2.1.8 Research data of Right now app |  | 6d | 2015-05-07 A | 2015-05-13 A |  | 100% |  |  | TuyenPT | 48h | 48h |
| 18 | 1.2.1.9 | 2.1.9 Research data of Yubisashi app |  | 6d | 2015-05-14 A | 2015-05-20 A | 17 | 100% |  |  | TuyenPT | 48h | 48h |
| 19 | 1.2.1.10 | 2.1.10 Create Survey plan |  | 4d | 2015-05-07 A | 2015-05-11 A |  | 100% |  |  | DuongTQ | 32h | 32h |
| 20 | 1.2.1.11 | 2.1.11 Review Survey plan |  | 1d | 2015-05-12 A | 2015-05-12 A | 19 | 100% |  |  | DatQT | 8h | 8h |
| 21 | 1.2.1.12 | 2.1.12 Create survey |  | 1d | 2015-05-13 A | 2015-05-13 A | 20 | 100% |  |  | DuongTQ | 8h | 8h |
| 22 | 1.2.1.13 | 2.1.13 Apply and manage suvey |  | 6d | 2015-05-14 A | 2015-05-20 A | 21 | 100% |  |  | DuongTQ | 48h | 48h |
| 23 | 1.2.2 | **2.2. Analysis** |  | 2d | 2015-05-21 A | 2015-05-22 A | 9 | 100% |  |  |  | 32h | 32h |
| 24 | 1.2.2.1 | 3.1 Survey analysis Meeting |  | 1d | 2015-05-21 A | 2015-05-21 A |  | 100% |  |  | TuyenPT | 8h | 8h |
| 25 | 1.2.2.2 | 3.2 Data analysis Meeting |  | 1d | 2015-05-22 A | 2015-05-22 A | 24 | 100% |  |  | TuyenPT | 8h | 8h |
| 26 | 1.2.2.3 | Sumary report 1 |  | 2d | 2015-05-21 A | 2015-05-22 A |  | 100% |  |  | DatQT | 16h | 16h |
| 27 | 1.2.3 | Complete report 1 | milestone, manual | 0d | 2015-05-22 A | 2015-05-22 A |  | 100% |  |  |  |  |  |

| ID | WBS | Task | Type | Duration | Start | Finish | Predecessors | Complete | Constraint | Resources | Work | Actual work |
| --- | --- | --- | --- | --- | --- | --- | --- | --- | --- | --- | --- | --- |
| 28 | 1.2.4 | **2.3. Design** |  | 30d | 2015-05-23 A | 2015-06-26 A | 23 | 100% |  |  | 336h | 336h |
| 29 | 1.2.4.1 | **2.3.1 System Requirement Specification** |  | 19d | 2015-05-23 A | 2015-06-13 A |  | 100% |  |  | 208h | 208h |
| 30 | 1.2.4.1.1 | 2.3.1.1 Create document |  | 1d | 2015-05-23 A | 2015-05-23 A |  | 100% |  | DatQT | 8h | 8h |
| 31 | 1.2.4.1.2 | 2.3.1.2 Define functionality |  | 3d | 2015-05-23 A | 2015-05-26 A |  | 100% |  | TuyenPT | 24h | 24h |
| 32 | 1.2.4.1.3 | 2.3.1.3 Review functionality |  | 1d | 2015-05-27 A | 2015-05-27 A | 31 | 100% |  | DatQT | 8h | 8h |
| 33 | 1.2.4.1.4 | 2.3.1.4 Define nonfunctional |  | 1d | 2015-05-28 A | 2015-05-28 A | 32 | 100% |  | ChinhNL | 8h | 8h |
| 34 | 1.2.4.1.5 | 2.3.1.5 Review nonfunctional |  | 1d | 2015-05-29 A | 2015-05-29 A | 33 | 100% |  | DatQT | 8h | 8h |
| 35 | 1.2.4.1.6 | 2.3.1.6 Draw use case diagram |  | 2d | 2015-05-28 A | 2015-05-29 A | 32 | 100% |  | DuongTQ | 16h | 16h |
| 36 | 1.2.4.1.7 | 2.3.1.7 Review use case diagram |  | 1d | 2015-06-01 A | 2015-06-01 A | 35 | 100% |  | DatQT | 8h | 8h |
| 37 | 1.2.4.1.8 | 2.3.1.8 Draw ERD |  | 1d | 2015-06-02 A | 2015-06-02 A | 36 | 100% |  | DuongTQ | 8h | 8h |
| 38 | 1.2.4.1.9 | 2.3.1.9 Review ERD |  | 1d | 2015-06-03 A | 2015-06-03 A | 37 | 100% |  | DatQT | 8h | 8h |
| 39 | 1.2.4.1.10 | 2.3.1.10 Draw Screen flow |  | 1d | 2015-06-03 A | 2015-06-03 A | 37 | 100% |  | DuongTQ | 8h | 8h |
| 40 | 1.2.4.1.11 | 2.3.1.11 Define use case description |  | 10d | 2015-05-30 A | 2015-06-10 A | 32 | 100% |  | TuyenPT | 80h | 80h |
| 41 | 1.2.4.1.12 | 2.3.1.12 Summary report 3 |  | 3d | 2015-06-11 A | 2015-06-13 A | 40 | 100% | start no earlier than 2015-06-08 | DatQT | 24h | 24h |
| 42 | 1.2.4.2 | Complete report 3 | milestone, manual | 0d | 2015-06-15 A | 2015-06-15 A |  | 100% |  |  |  |  |
| 43 | 1.2.4.3 | **2.3.2 System Architecture Design** |  | 11d | 2015-06-15 A | 2015-06-26 A | 29 | 100% |  |  | 128h | 128h |
| 44 | 1.2.4.3.1 | 2.3.2.1 Create document |  | 1d | 2015-06-15 A | 2015-06-15 A |  | 100% |  | DatQT | 8h | 8h |
| 45 | 1.2.4.3.2 | 2.3.2.2 Analysis Class Diagram |  | 2d | 2015-06-15 A | 2015-06-16 A |  | 100% |  | DuongTQ | 16h | 16h |
| 46 | 1.2.4.3.3 | 2.3.2.3 Review Analysis Class Diagram |  | 1d | 2015-06-17 A | 2015-06-17 A | 45 | 100% |  | DatQT | 8h | 8h |
| 47 | 1.2.4.3.4 | 2.3.2.4 Creat CRC Card |  | 1d | 2015-06-18 A | 2015-06-18 A | 46 | 100% |  | TuyenPT | 8h | 8h |
| 48 | 1.2.4.3.5 | 2.3.2.5 Review CRC Card |  | 1d | 2015-06-20 A | 2015-06-20 A | 47 | 100% | start no earlier than 2015-04-15 | DatQT | 8h | 8h |
| 49 | 1.2.4.3.6 | 2.3.2.6 Interaction Diagram |  | 1d | 2015-06-18 A | 2015-06-18 A | 46 | 100% |  | DuongTQ | 8h | 8h |
| 50 | 1.2.4.3.7 | 2.3.2.7 Review Interaction Diagram |  | 1d | 2015-06-19 A | 2015-06-19 A | 49 | 100% |  | DatQT | 8h | 8h |
| 51 | 1.2.4.3.8 | 2.3.2.8 Creat Class Specification Diagram |  | 2d | 2015-06-22 A | 2015-06-23 A | 48 | 100% |  | TuyenPT | 16h | 16h |
| 52 | 1.2.4.3.9 | 2.3.2.9 Review Class Specification |  | 1d | 2015-06-25 A | 2015-06-25 A | 51 | 100% | start no earlier than 2015-06-25 | DatQT | 8h | 8h |
| 53 | 1.2.4.3.10 | 2.3.2.10 Database Design and Data structure |  | 3d | 2015-06-20 A | 2015-06-23 A | 50 | 100% |  | DuongTQ | 24h | 24h |
| 54 | 1.2.4.3.11 | 2.3.2.11 Review Database Design and Structure |  | 1d | 2015-06-24 A | 2015-06-24 A | 53 | 100% |  | DatQT | 8h | 8h |
| 55 | 1.2.4.3.12 | 2.3.2.12 Summary report 4 |  | 1d | 2015-06-26 A | 2015-06-26 A |  | 100% | start no earlier than 2015-06-26 | DatQT | 8h | 8h |
| 56 | 1.2.5 | Complete report 4 | milestone | 0d | 2015-06-27 A | 2015-06-27 A |  | 100% | start no earlier than 2015-06-27 |  |  |  |

| ID | WBS | Task | Duration | Start | Finish | Predecessors | Complete | Remaining | Total slack | Constraint | Resources | Work | Actual work |
| --- | --- | --- | --- | --- | --- | --- | --- | --- | --- | --- | --- | --- | --- |
| 57 | 1.2.6 | **2.4. Production** | 14d | 2015-06-27 A | 2015-07-13 A | 28 | 100% |  |  |  |  | 296h | 296h |
| 58 | 1.2.6.1 | **2.4.1 Build Data** | 3d | 2015-06-27 A | 2015-06-30 A |  | 100% |  |  |  |  | 24h | 24h |
| 59 | 1.2.6.1.1 | 2.4.1.1 Build demo sentence | 1d | 2015-06-27 A | 2015-06-27 A |  | 100% |  |  | start no earlier than 2015-06-27 | ChinhNL | 8h | 8h |
| 60 | 1.2.6.1.2 | 2.4.1.2 Build demo sound file | 1d | 2015-06-29 A | 2015-06-29 A | 59 | 100% |  |  |  | ChinhNL | 8h | 8h |
| 61 | 1.2.6.1.3 | 2.4.1.3 Review data | 1d | 2015-06-30 A | 2015-06-30 A | 59, 60 | 100% |  |  |  | DatQT | 8h | 8h |
| 62 | 1.2.6.2 | **2.4.2 Coding** | 13d | 2015-06-27 A | 2015-07-11 A |  | 100% |  |  |  |  | 176h | 176h |
| 63 | 1.2.6.2.1 | 2.4.2.1 Demo technical | 3d | 2015-06-27 A | 2015-06-30 A |  | 100% |  |  |  | LongNB | 24h | 24h |
| 64 | 1.2.6.2.2 | 2.4.2.2 Category List and Sub Category List | 2d | 2015-07-01 A | 2015-07-02 A | 63 | 100% |  |  |  | LongNB | 16h | 16h |
| 65 | 1.2.6.2.3 | 2.4.2.3 Tagging | 4d | 2015-07-03 A | 2015-07-07 A | 64 | 100% |  |  |  | LongNB | 32h | 32h |
| 66 | 1.2.6.2.4 | 2.4.2.4 Sentence list | 2d | 2015-07-08 A | 2015-07-09 A | 65 | 100% |  |  |  | LongNB | 16h | 16h |
| 67 | 1.2.6.2.5 | 2.4.2.5 Popup sentence | 2d | 2015-07-10 A | 2015-07-11 A | 66 | 100% |  |  |  | LongNB | 16h | 16h |
| 68 | 1.2.6.2.6 | 2.4.2.5 Review code | 9d | 2015-07-01 A | 2015-07-10 A |  | 100% |  |  |  | DatQT | 72h | 72h |
| 69 | 1.2.6.3 | **2.4.3 Testing** | 11d | 2015-06-30 A | 2015-07-11 A |  | 100% |  |  |  |  | 88h | 88h |
| 70 | 1.2.6.3.1 | 2.4.3.1 Create test plan | 2d | 2015-06-30 A | 2015-07-01 A |  | 100% |  |  |  | ChinhNL | 16h | 16h |
| 71 | 1.2.6.3.2 | 2.4.3.2 Create test case | 4d | 2015-07-02 A | 2015-07-06 A | 70 | 100% |  |  |  | ChinhNL | 32h | 32h |
| 72 | 1.2.6.3.3 | 5.3.5 Execute test | 5d | 2015-07-07 A | 2015-07-11 A | 71 | 100% |  |  |  | ChinhNL | 40h | 40h |
| 73 | 1.2.6.4 | 2.4.4 Evaluation and continuous plan meeting | 1d | 2015-07-13 A | 2015-07-13 A | 69, 62, 58 | 100% |  |  | start no earlier than 2015-07-13 | DatQT | 8h | 8h |
| 74 | 1.3 | **3. Iterative II** | 36d | 2015-07-14 A | 2015-08-26 | 8 | 99% | 0.4d | 0d |  |  | 712h | 704h |
| 75 | 1.3.1 | **3.1 Research** | 2d | 2015-07-14 A | 2015-07-15 A |  | 100% |  |  |  |  | 32h | 32h |
| 76 | 1.3.1.1 | 3.1.1 Learning about material design | 2d | 2015-07-14 A | 2015-07-15 A |  | 100% |  |  |  | DatQT | 16h | 16h |
| 77 | 1.3.1.2 | 3.1.2 Research about android library | 2d | 2015-07-14 A | 2015-07-15 A |  | 100% |  |  |  | LongNB | 16h | 16h |
| 78 | 1.3.2 | **3.2 Analysis** | 6d | 2015-07-16 A | 2015-07-22 A | 75 | 100% |  |  |  |  | 48h | 48h |
| 79 | 1.3.2.1 | 3.2.1 Create first material demo UI | 2d | 2015-07-16 A | 2015-07-17 A |  | 100% |  |  |  | DatQT | 16h | 16h |
| 80 | 1.3.2.2 | 3.2.2 Review first demo UI | 1d | 2015-07-18 A | 2015-07-18 A | 79 | 100% |  |  |  | LongNB | 8h | 8h |
| 81 | 1.3.2.3 | 3.2.3 Create second material demo UI | 2d | 2015-07-20 A | 2015-07-21 A | 80 | 100% |  |  |  | DatQT | 16h | 16h |
| 82 | 1.3.2.4 | 3.2.4 Review second demo UI | 1d | 2015-07-22 A | 2015-07-22 A | 81 | 100% |  |  |  | LongNB | 8h | 8h |

| ID | WBS | Task | Type | Duration | Start | Finish | Predecessors | Complete | Remaining | Total slack | Constraint | Resources | Work | Actual work |
| --- | --- | --- | --- | --- | --- | --- | --- | --- | --- | --- | --- | --- | --- | --- |
| 83 | 1.3.3 | **3.3 Design** |  | 5d | 2015-07-23 A | 2015-07-28 A | 78 | 100% |  |  |  |  | 80h | 80h |
| 84 | 1.3.3.1 | 3.3.1 Create Final UI |  | 5d | 2015-07-23 A | 2015-07-28 A |  | 100% |  |  |  | DatQT | 40h | 40h |
| 85 | 1.3.3.2 | 3.3.2 Update SRD base on new UI |  | 5d | 2015-07-23 A | 2015-07-28 A |  | 100% |  |  |  | TuyenPT | 40h | 40h |
| 86 | 1.3.4 | **3.4 Production** |  | 23d | 2015-07-29 A | 2015-08-26 | 83 | 99% | 0.33d | 0d |  |  | 552h | 544h |
| 87 | 1.3.4.1 | **3.4.1 Build data** |  | 15d | 2015-07-29 A | 2015-08-15 |  | 93% | 1d | 8d |  |  | 120h | 112h |
| 88 | 1.3.4.1.1 | 3.4.1.1 Build sentence data |  | 10d | 2015-07-29 A | 2015-08-10 A |  | 100% |  |  |  | DuongTQ | 80h | 80h |
| 89 | 1.3.4.1.2 | 3.4.1.2 Build location data |  | 2d | 2015-08-11 A | 2015-08-12 A | 88 | 100% |  |  |  | DuongTQ | 16h | 16h |
| 90 | 1.3.4.1.3 | 3.4.1.3 Build tag data |  | 1d | 2015-08-13 A | 2015-08-13 A | 89 | 100% |  |  |  | DuongTQ | 8h | 8h |
| 91 | 1.3.4.1.4 | 3.4.1.4 Build sound data |  | 2d | 2015-08-14 A | 2015-08-15 | 90 | 50% | 1d | 8d | start no earlier than 2015-08-13 | DuongTQ | 16h | 8h |
| 92 | 1.3.4.2 | **3.4.2 Coding** |  | 23d | 2015-07-29 A | 2015-08-26 A |  | 100% |  |  |  |  | 184h | 184h |
| 93 | 1.3.4.2.1 | 3.4.2.1 History and favorite |  | 2d | 2015-07-29 A | 2015-07-30 A |  | 100% |  |  |  | LongNB | 16h | 16h |
| 94 | 1.3.4.2.2 | 3.4.2.2 Tag list |  | 2d | 2015-07-31 A | 2015-08-01 A | 93 | 100% |  |  |  | LongNB | 16h | 16h |
| 95 | 1.3.4.2.3 | 3.4.2.3 Add Edit Sentence |  | 2d | 2015-08-03 A | 2015-08-04 A | 94 | 100% |  |  |  | LongNB | 16h | 16h |
| 96 | 1.3.4.2.4 | 3.4.2.4 Record |  | 1d | 2015-08-05 A | 2015-08-05 A | 95 | 100% |  |  |  | LongNB | 8h | 8h |
| 97 | 1.3.4.2.5 | 3.4.2.5 Capture |  | 1d | 2015-08-06 A | 2015-08-06 A | 96 | 100% |  |  |  | LongNB | 8h | 8h |
| 98 | 1.3.4.2.6 | 3.4.2.6 Sugestion |  | 5d | 2015-08-07 A | 2015-08-13 A | 97 | 100% |  |  | start no earlier than 2015-08-07 | LongNB | 40h | 40h |
| 99 | 1.3.4.2.7 | 3.4.2.7 Fix bug |  | 10d | 2015-08-14 A | 2015-08-26 A | 98 | 100% |  |  |  | LongNB | 80h | 80h |
| 100 | 1.3.4.3 | **3.4.3 Testing** |  | 22d | 2015-07-29 A | 2015-08-25 A |  | 100% |  |  |  |  | 248h | 248h |
| 101 | 1.3.4.3.1 | 3.4.3.1 Update test case |  | 10d | 2015-07-29 A | 2015-08-10 A |  | 100% |  |  |  | ChinhNL | 80h | 80h |
| 102 | 1.3.4.3.2 | 3.4.3.2 Execute test |  | 12d | 2015-08-11 A | 2015-08-25 A | 101 | 100% |  |  | finish no earlier than 2015-08-25 | ChinhNL | 96h | 96h |
| 103 | 1.3.4.3.3 | 3.4.3.3 Create Unit test case and execute |  | 9d | 2015-08-03 A | 2015-08-13 A |  | 100% |  |  | start no earlier than 2015-08-03 | TuyenPT | 72h | 72h |
| 104 | 1.4 | **4. Monitoring and Controlling** |  | 98d | 2015-05-01 A | 2015-08-25 A |  | 100% |  |  |  |  | 288h | 288h |
| 105 | 1.4.1 | 4.1 Create common team rule |  | 1d | 2015-05-01 A | 2015-05-01 A |  | 100% |  |  |  | DatQT | 8h | 8h |
| 106 | 1.4.2 | 4.2 Create comunication management plan |  | 2d | 2015-05-04 A | 2015-05-05 A | 105 | 100% |  |  |  | DatQT | 16h | 16h |
| 107 | 1.4.3 | 4.3 Create project schedule plan |  | 2d | 2015-05-14 A | 2015-05-15 A | 106 | 100% |  |  |  | DatQT | 16h | 16h |
| 108 | 1.4.4 | 4.4 Create Risk management plan |  | 3d | 2015-05-16 A | 2015-05-19 A | 107 | 100% |  |  | start no earlier than 2015-05-11 | ChinhNL | 24h | 24h |
| 109 | 1.4.5 | 4.5 Create Quality Management Plan |  | 3d | 2015-05-27 A | 2015-05-29 A | 107 | 100% |  |  | start no earlier than 2015-05-18 | TuyenPT | 24h | 24h |
| 110 | 1.4.6 | 4.6 Summary report 2 |  | 1d | 2015-05-30 A | 2015-05-30 A | 108, 109 | 100% |  |  |  | DatQT | 8h | 8h |
| 111 | 1.4.7 | Complete report 2 | milestone, manual | 0d | 2015-06-01 A | 2015-06-01 A |  | 100% |  |  |  |  |  |  |
| 112 | 1.4.8 | 4.7 Summary report 5 |  | 5d | 2015-07-13 A | 2015-07-17 A |  | 100% |  |  | start no earlier than 2015-07-13 | ChinhNL | 40h | 40h |
| 113 | 1.4.9 | Complete report 5 | milestone | 0d | 2015-07-20 A | 2015-07-20 A |  | 100% |  |  | start no earlier than 2015-07-20 |  |  |  |
| 114 | 1.4.10 | 4.8 Sumary report 6 |  | 3d | 2015-08-01 A | 2015-08-04 A |  | 100% |  |  | start no earlier than 2015-08-01 | DatQT | 24h | 24h |
| 115 | 1.4.11 | Complete report 6 | milestone | 0d | 2015-08-06 A | 2015-08-06 A |  | 100% |  |  |  |  |  |  |
| 116 | 1.4.12 | 4.9 Summary final report |  | 9d | 2015-08-05 A | 2015-08-15 A | 114 | 100% |  |  | finish no earlier than 2015-08-14 | DatQT | 72h | 72h |
| 117 | 1.4.13 | Complete final report | milestone | 0d | 2015-08-15 A | 2015-08-15 A |  | 100% |  |  | start no earlier than 2015-08-15 |  |  |  |
| 118 | 1.4.14 | 4.10 Update all document |  | 7d | 2015-08-17 A | 2015-08-25 A | 116 | 100% |  |  |  | DatQT | 56h | 56h |

| ID | WBS | Task | Duration | Start | Finish | Predecessors | Complete |
| --- | --- | --- | --- | --- | --- | --- | --- |
| 119 | 1.5 | **5. Launch** | 1d | 2015-08-27 A | 2015-08-27 A | 74 | 100% |
| 120 | 1.5.1 | 7.2 Postmortem | 1d | 2015-08-27 A | 2015-08-27 A |  | 100% |
